# Projektplan_04

How a schedule from MS Project changed from version to version. A marks actual dates.

## Version 1 (saved 2014-05-27, file Projektplan.mpp)

Note of the change: added initial files

| ID | WBS | Task | Duration | Start | Finish | Predecessors | Total float | Constraint |
| --- | --- | --- | --- | --- | --- | --- | --- | --- |
| 1 | 1 | **Wettbewerbsanalyse** | 3.83d | 2014-06-02 | 2014-06-12 |  | 4.84d |  |
| 2 |  | Alternativen recherchieren | 2d | 2014-06-02 | 2014-06-05 |  | 4.84d |  |
| 3 |  | Mediatheken explorieren | 2d | 2014-06-05 | 2014-06-12 | 2 | 4.84d |  |
| 4 |  | Einschätzung der Mediatheken | 1d | 2014-06-02 | 2014-06-03 |  | 7.72d |  |
| 5 |  | Featurematrix erstellen | 0.2d | 2014-06-12 | 2014-06-12 | 3, 4 | 4.84d |  |
| 6 |  | Featurematrix abgeschlossen | 0d | 2014-06-12 | 2014-06-12 | 5 | 4.84d |  |
| 7 | 2 | **Mediatheken einbinden** | 25.18d | 2014-06-12 | 2014-09-03 | 1 | 0d |  |
| 8 |  | API's recherchieren | 4d | 2014-06-12 | 2014-06-26 |  | 4.67d |  |
| 9 |  | API's einbinden | 2d | 2014-06-26 | 2014-07-01 | 8 | 4.67d |  |
| 10 | 2.3 | **Suchen in Mediatheken** | 14.38d | 2014-07-01 | 2014-08-21 | 9 | 5.3d |  |
| 11 |  | Exploration der Suchfunktionen der Mediatheken | 1d | 2014-07-01 | 2014-07-03 |  | 5.3d |  |
| 12 |  | Entwicklung Queries | 6d | 2014-07-03 | 2014-07-24 | 11 | 5.17d |  |
| 13 |  | Kombination Suchalgorithmen | 5d | 2014-07-24 | 2014-08-07 | 12 | 5.17d |  |
| 14 |  | Parsen der Ergebnisse | 2d | 2014-08-07 | 2014-08-14 | 13 | 5.17d |  |
| 15 |  | Darstellung der Ergebnisse | 2d | 2014-08-14 | 2014-08-21 | 14 | 5.5d |  |
| 16 |  | Suchen in Mediatheken abgeschlossen | 0d | 2014-08-21 | 2014-08-21 | 15 | 5.67d |  |
| 17 | 2.4 | **Streamen von Mediatheken** | 9.75d | 2014-07-01 | 2014-08-05 | 9 | 8.05d |  |
| 18 |  | Streaming | 9d | 2014-07-01 | 2014-07-29 |  | 8.05d |  |
| 19 |  | Dateitypen / Player & Grundlagen | 2d | 2014-07-29 | 2014-08-05 | 18 | 8.05d |  |
| 20 |  | Streaming in Seite einbinden | 2d | 2014-08-05 | 2014-08-12 | 17 | 8.3d |  |
| 21 | 2.6 | **Browsing in Mediatheken** | 20.05d | 2014-07-01 | 2014-09-03 | 9 | 0d |  |
| 22 |  | Exploration der IA's der Mediatheken | 2.67d | 2014-07-01 | 2014-07-10 | 1 | 4.84d |  |
| 23 |  | Erstellung geeigneter IA | 1.33d | 2014-07-10 | 2014-07-15 | 22 | 4.84d |  |
| 24 |  | IA in Datenbank hinterlegen | 3d | 2014-07-31 | 2014-08-11 | 23 | 0d | as late as possible |
| 25 |  | Mapping der eigenen IA zu den Mediatheken | 4d | 2014-08-11 | 2014-08-21 | 24 | 0d | as late as possible |
| 26 |  | Entwicklung Queries | 5.33d | 2014-08-21 | 2014-09-03 | 25 | 0d | as late as possible |
| 27 |  | Browsing in Mediatheken abgeschlossen | 0d | 2014-09-03 | 2014-09-03 | 26 | 0d |  |
| 28 | 3 | **Grundgerüst der Seite** | 3.5d | 2014-06-02 | 2014-06-12 |  | 7.62d |  |
| 29 |  | Datenbankschema | 0.5d | 2014-06-02 | 2014-06-02 |  | 7.62d |  |
| 30 |  | PHP Framework | 2d | 2014-06-03 | 2014-06-09 | 29 | 7.75d |  |
| 31 |  | User Login | 1.5d | 2014-06-09 | 2014-06-12 | 30 | 31.62d |  |
| 32 | 4 | **Interface** | 29d | 2014-06-02 | 2014-09-04 |  | 0d |  |
| 33 |  | Sketching | 2d | 2014-06-02 | 2014-06-05 |  | 0d |  |
| 34 |  | UI Entwürfe abgschlossen | 0d | 2014-06-05 | 2014-06-05 | 33 | 0d |  |
| 35 | 4.3 | **Prototyping** | 2.12d | 2014-06-05 | 2014-06-16 | 34 | 0d |  |
| 36 |  | Paper Prototype erstellen | 2d | 2014-06-05 | 2014-06-12 |  | 0d |  |
| 37 |  | Paper Prototype testen | 1d | 2014-06-12 | 2014-06-16 | 36 | 0d |  |
| 38 | 4.4 | **Screendesign** | 5.62d | 2014-06-17 | 2014-07-03 | 35 | 0d |  |
| 39 |  | Screendesign Landing Page | 2d | 2014-06-17 | 2014-06-23 |  | 0d |  |
| 40 |  | Screendesign Persönlicher Bereich | 2d | 2014-06-23 | 2014-06-26 | 39 | 0d |  |
| 41 |  | Screendesign Sendungsbereich | 2d | 2014-06-30 | 2014-07-03 | 40 | 0d |  |
| 42 |  | Screendesign abgeschlossen | 0d | 2014-07-03 | 2014-07-03 | 41 | 0d |  |
| 43 | 4.5 | **Technische Umsetzung** | 19.12d | 2014-07-03 | 2014-09-04 | 42, 30 | 0d |  |
| 44 | 4.5.1 | **Dashboard (Startseite)** | 8.62d | 2014-07-03 | 2014-08-05 |  | 0d |  |
| 45 |  | Favoriten | 2d | 2014-07-03 | 2014-07-10 |  | 0d |  |
| 46 |  | Neue Sendungen | 2d | 2014-07-10 | 2014-07-17 | 45 | 0d |  |
| 47 |  | Kategorisierung | 2d | 2014-07-17 | 2014-07-22 | 46 | 0d |  |
| 48 |  | Filterung | 4d | 2014-07-22 | 2014-08-05 | 47 | 0d |  |
| 49 |  | Grundgerüst der Startseite abgeschlossen | 0d | 2014-08-05 | 2014-08-05 | 48 | 0d | as late as possible |
| 50 | 4.5.2 | **Persönlicher Bereich** | 19.12d | 2014-07-03 | 2014-09-04 |  | 0d |  |
| 51 |  | Favoritenliste | 2d | 2014-07-03 | 2014-07-10 |  | 8.5d |  |
| 52 |  | Reminder & Abos | 2d | 2014-07-10 | 2014-07-17 | 51 | 8.62d |  |
| 53 |  | Playlisten | 2d | 2014-07-17 | 2014-07-22 | 52 | 8.62d |  |
| 54 |  | Merkliste | 4d | 2014-07-22 | 2014-08-05 | 53 | 9d |  |
| 55 |  | Grundgerüst des persönlichen Bereichs abgeschlossen | 0d | 2014-09-04 | 2014-09-04 | 54 | 0d | as late as possible |
| 56 | 4.6 | **Design-Umsetzung** | 7.38d | 2014-08-05 | 2014-08-28 |  | 0d |  |
| 57 |  | Umsetzung Landing-Page | 2d | 2014-08-05 | 2014-08-11 | 49 | 0d |  |
| 58 |  | Umsetzung Sendungsbereich | 4d | 2014-08-12 | 2014-08-21 | 57 | 0d |  |
| 59 |  | Umsetzung Persönlicher Bereich | 2d | 2014-08-25 | 2014-08-28 | 58 | 0d |  |
| 60 |  | Anpassungen (Design) | 1d | 2014-08-28 | 2014-09-01 | 59 | 0d |  |
| 61 |  | Browserspezifische Anpassungen | 1d | 2014-09-01 | 2014-09-02 | 60 | 0d |  |
| 62 |  | Interface abgeschlossen | 0d | 2014-09-04 | 2014-09-04 | 61 | 0d | as late as possible |
| 63 | 5 | **Testing** | 6.12d | 2014-09-04 | 2014-09-12 | 7, 32 | 0d |  |
| 64 |  | Softwaretests | 2.88d | 2014-09-04 | 2014-09-08 |  | 0d |  |
| 65 |  | Usability-Test | 3.25d | 2014-09-08 | 2014-09-12 | 64 | 0d |  |

## Version 2 (data date 2014-06-05, saved 2014-06-05, file Projektplan.mpp)

Note of the change: updated project schedule

Last finish 2014-09-12 → 2014-09-02 (-10d). Complete tasks 0 → 2.

Added:

| ID | Task | Duration | Start | Finish | Predecessors | Constraint | Resources |
| --- | --- | --- | --- | --- | --- | --- | --- |
| 9 | **"ZDF" Mediathek** | 18.5d | 2014-06-19 | 2014-08-25 | 8 |  |  |
| 17 | Exploration der IA der Mediathek | 2d | 2014-06-19 | 2014-06-26 |  |  | Tobias [75%] |
| 24 | "ZDF" Mediathek eingebunden | 0d | 2014-08-07 | 2014-08-07 | 23 |  |  |
| 25 | **"Das Erste" Mediathek** | 17d | 2014-06-19 | 2014-08-19 | 8 |  |  |
| 26 | **Suchen in "Das Erste"** | 6.95d | 2014-06-19 | 2014-07-15 |  |  |  |
| 27 | Exploration der Suchfunktionen von "Das Erste" | 1d | 2014-06-19 | 2014-06-23 |  |  | David [50%] |
| 28 | Entwicklung Queries | 3d | 2014-06-23 | 2014-07-01 | 27 |  | David [50%] |
| 29 | Parsen der Ergebnisse | 2d | 2014-07-01 | 2014-07-08 | 28 |  | David [50%] |
| 30 | Darstellung der Ergebnisse | 2d | 2014-07-08 | 2014-07-15 | 29 |  | David [50%]; Lukas [50%] |
| 31 | Suchen in Mediatheken abgeschlossen | 0d | 2014-07-15 | 2014-07-15 | 30 |  | David |
| 32 | **Browsing in "Das Erste"** | 17d | 2014-06-19 | 2014-08-19 |  |  |  |
| 34 | Entwicklung Queries | 3d | 2014-08-11 | 2014-08-19 | 33 | as late as possible | Lukas |
| 35 | Browsing in Mediatheken abgeschlossen | 0d | 2014-08-19 | 2014-08-19 | 34 |  | Tobias |
| 36 | **Streamen von "Das Erste"** | 6.25d | 2014-07-15 | 2014-08-05 | 31 |  |  |
| 37 | Streaming | 6d | 2014-07-15 | 2014-07-31 |  |  | Lukas [50%]; David [50%] |
| 38 | Dateitypen / Player & Grundlagen | 1d | 2014-07-31 | 2014-08-05 | 37 |  | Lukas [50%]; David [50%] |
| 39 | Streaming in Seite einbinden | 1d | 2014-08-05 | 2014-08-07 | 36 |  | Lukas [50%] |
| 40 | "Das Erste" Mediathek eingebunden | 0d | 2014-08-07 | 2014-08-07 | 39 |  |  |
| 64 | Suche | 2d | 2014-07-03 | 2014-07-10 |  |  |  |
| 65 | Sendung-Detailsseite | 2d | 2014-07-03 | 2014-07-10 |  |  |  |
| 67 | Dashboard (Übersicht) | 1d? | 2014-07-03 | 2014-07-08 |  |  |  |

Removed: 9 API's einbinden; 23 Erstellung geeigneter IA; 24 IA in Datenbank hinterlegen; 25 Mapping der eigenen IA zu den Mediatheken; 51 Favoritenliste

Changed:

| ID | Task | Start | Finish | Duration | Complete | Total float | Predecessors | Other |
| --- | --- | --- | --- | --- | --- | --- | --- | --- |
| 1 | **Wettbewerbsanalyse** | 2014-06-02 A |  |  | 0% → 2% | 4.84d → 2.67d |  |  |
| 5 | Featurematrix erstellen | 2014-06-12 A |  |  | 0% → 50% | 4.84d → 2.67d |  |  |
| 7 | **Mediatheken einbinden** |  | 2014-09-03 → 2014-08-25 (-9d) | 25.18d → 20.18d |  | 0d → 0.25d |  |  |
| 8 | API's recherchieren |  | 2014-06-26 → 2014-06-19 (-7d) | 4d → 2d |  | 4.67d → 2.5d |  |  |
| 10 | **Suchen in "ZDF"** | 2014-07-01 → 2014-06-19 (-12d) | 2014-08-21 → 2014-07-15 (-37d) | 14.38d → 6.95d |  | 5.3d → 4.5d | API's einbinden → none | was named Suchen in Mediatheken |
| 11 | Exploration der Suchfunktionen von "ZDF" | 2014-07-01 → 2014-06-19 (-12d) | 2014-07-03 → 2014-06-23 (-10d) |  |  | 5.3d → 4.5d |  | was named Exploration der Suchfunktionen der Mediatheken |
| 12 | Entwicklung Queries | 2014-07-03 → 2014-06-23 (-10d) | 2014-07-24 → 2014-07-01 (-23d) | 6d → 3d |  | 5.17d → 4.92d |  |  |
| 13 | Parsen der Ergebnisse | 2014-08-07 → 2014-07-01 (-37d) | 2014-08-14 → 2014-07-08 (-37d) |  |  | 5.17d → 4.8d | 41 → 12 |  |
| 14 | Darstellung der Ergebnisse | 2014-08-14 → 2014-07-08 (-37d) | 2014-08-21 → 2014-07-15 (-37d) |  |  | 5.5d → 4.92d |  |  |
| 15 | Suchen in Mediatheken abgeschlossen | 2014-08-21 → 2014-07-15 (-37d) | 2014-08-21 → 2014-07-15 (-37d) |  |  | 5.67d → 4.92d |  |  |
| 16 | **Browsing in "ZDF"** | 2014-07-01 → 2014-06-19 (-12d) | 2014-09-03 → 2014-08-25 (-9d) | 20.05d → 18.5d |  | 0d → 0.25d | API's einbinden → 8 | was named Browsing in Mediatheken |
| 18 | Entwicklung Queries | 2014-08-21 → 2014-08-14 (-7d) | 2014-09-03 → 2014-08-25 (-9d) | 5.33d → 3d |  |  | Mapping der eigenen IA zu den Mediatheken → 17 |  |
| 19 | Browsing in Mediatheken abgeschlossen | 2014-09-03 → 2014-08-25 (-9d) | 2014-09-03 → 2014-08-25 (-9d) |  |  | 0d → 0.25d |  |  |
| 20 | **Streamen von "ZDF"** | 2014-07-01 → 2014-07-15 (+14d) |  | 9.75d → 6.25d |  | 8.05d → 4.8d | API's einbinden → 15 | was named Streamen von Mediatheken |
| 21 | Streaming | 2014-07-01 → 2014-07-15 (+14d) | 2014-07-29 → 2014-07-31 (+2d) | 9d → 6d |  | 8.05d → 4.5d |  |  |
| 22 | Dateitypen / Player & Grundlagen | 2014-07-29 → 2014-07-31 (+2d) |  | 2d → 1d |  | 8.05d → 4.5d |  |  |
| 23 | Streaming in Seite einbinden |  | 2014-08-12 → 2014-08-07 (-5d) | 2d → 1d |  | 8.3d → 4.17d |  |  |
| 33 | Exploration der IA's der Mediatheken | 2014-07-01 → 2014-06-19 (-12d) | 2014-07-10 → 2014-06-26 (-14d) | 2.67d → 2d |  | 4.84d → 12.5d | 1 → none |  |
| 41 | Kombination Suchalgorithmen | 2014-07-24 → 2014-08-19 (+26d) | 2014-08-07 → 2014-08-25 (+18d) | 5d → 2d |  | 5.17d → 0d | 12 → 25 |  |
| 46 | **Interface** | 2014-06-02 A | 2014-09-04 → 2014-08-26 (-9d) | 29d → 24.25d? | 0% → 5% |  |  |  |
| 47 | Sketching | 2014-06-02 A | 2014-06-05 A |  | 0% → 100% | 0d → none |  |  |
| 48 | UI Entwürfe abgschlossen | 2014-06-05 A | 2014-06-05 A |  | 0% → 100% | 0d → none |  |  |
| 50 | Axure Prototype erstellen |  |  |  |  |  |  | was named Paper Prototype erstellen |
| 51 | Prototype testen |  |  |  |  |  |  | was named Paper Prototype testen |
| 53 | Screendesign Startseite |  |  |  |  |  |  | was named Screendesign Landing Page |
| 57 | **Technische Umsetzung** |  | 2014-09-04 → 2014-08-26 (-9d) | 19.12d → 14.38d? |  |  |  |  |
| 58 | **Startseite** |  | 2014-08-05 → 2014-07-29 (-7d) | 8.62d → 6.88d |  |  |  | was named Dashboard (Startseite) |
| 59 | Beliebte Sendungen |  |  |  |  |  |  | was named Favoriten |
| 62 | Filterung |  | 2014-08-05 → 2014-07-29 (-7d) | 4d → 2d |  |  |  |  |
| 63 | Grundgerüst der Startseite abgeschlossen | 2014-08-05 → 2014-07-29 (-7d) | 2014-08-05 → 2014-07-29 (-7d) |  |  |  |  |  |
| 66 | **Persönlicher Bereich** |  | 2014-09-04 → 2014-08-26 (-9d) | 19.12d → 14.38d? |  |  |  |  |
| 68 | Reminder & Abos | 2014-07-10 → 2014-07-08 (-2d) | 2014-07-17 → 2014-07-15 (-2d) |  |  | 8.62d → 8.12d | Favoritenliste → 67 |  |
| 69 | Playlisten | 2014-07-17 → 2014-07-15 (-2d) |  |  |  | 8.62d → 8.12d |  |  |
| 70 | Merkliste |  | 2014-08-05 → 2014-07-28 (-8d) | 4d → 2d |  | 9d → 8d |  |  |
| 71 | Grundgerüst des persönlichen Bereichs abgeschlossen | 2014-09-04 → 2014-08-26 (-9d) | 2014-09-04 → 2014-08-26 (-9d) |  |  |  |  |  |
| 72 | **Design-Umsetzung** | 2014-08-05 → 2014-07-29 (-7d) | 2014-08-28 → 2014-08-19 (-9d) | 7.38d → 5.75d |  |  |  |  |
| 73 | Umsetzung Startseite | 2014-08-05 → 2014-07-29 (-7d) | 2014-08-11 → 2014-08-05 (-6d) | 2d → 2.5d |  |  |  | was named Umsetzung Landing-Page |
| 74 | Umsetzung Sendung-Detailseite | 2014-08-12 → 2014-08-05 (-7d) | 2014-08-21 → 2014-08-12 (-9d) | 4d → 2d |  |  |  | was named Umsetzung Sendungsbereich |
| 75 | Umsetzung Persönlicher Bereich | 2014-08-25 → 2014-08-12 (-13d) | 2014-08-28 → 2014-08-19 (-9d) |  |  |  |  |  |
| 76 | Anpassungen (Design) | 2014-08-28 → 2014-08-19 (-9d) | 2014-09-01 → 2014-08-21 (-11d) |  |  |  |  |  |
| 77 | Browserspezifische Anpassungen | 2014-09-01 → 2014-08-21 (-11d) | 2014-09-02 → 2014-08-25 (-8d) |  |  |  |  |  |
| 78 | Interface abgeschlossen | 2014-09-04 → 2014-08-26 (-9d) | 2014-09-04 → 2014-08-26 (-9d) |  |  |  |  |  |
| 79 | **Testing** | 2014-09-04 → 2014-08-26 (-9d) | 2014-09-12 → 2014-09-02 (-10d) | 6.12d → 2.88d |  |  |  |  |
| 80 | Softwaretests | 2014-09-04 → 2014-08-26 (-9d) | 2014-09-08 → 2014-09-01 (-7d) | 2.88d → 2d |  |  |  |  |
| 81 | Usability-Test | 2014-09-08 → 2014-09-01 (-7d) | 2014-09-12 → 2014-09-02 (-10d) | 3.25d → 0.88d |  |  |  |  |

## Version 3 (data date 2014-06-08, saved 2014-06-08, file Projektplan.mpp)

Note of the change: updated project plan

Last finish stays 2014-09-02.

Changed:

| ID | Task | Start | Complete | Total float |
| --- | --- | --- | --- | --- |
| 1 | **Wettbewerbsanalyse** |  | 2% → 31% | 2.67d → 0d |
| 2 | Alternativen recherchieren | 2014-06-02 A | 0% → 50% | 0d → 0.12d |
| 3 | Mediatheken explorieren | 2014-06-05 A | 0% → 25% | 0.1d → 0.23d |
| 7 | **Mediatheken einbinden** | 2014-06-12 A | 0% → 1% |  |
| 8 | API's recherchieren | 2014-06-12 A | 0% → 25% |  |
| 42 | **Grundgerüst der Seite** | 2014-06-02 A | 0% → 44% | 7.62d → 23.62d |
| 43 | Datenbankschema | 2014-06-02 A | 0% → 25% | 7.62d → 0.75d |
| 44 | PHP Framework | 2014-06-03 A | 0% → 25% | 7.75d → 1d |
| 45 | User Login | 2014-06-09 A | 0% → 75% |  |

## Version 4 (data date 2014-06-09, saved 2014-06-09, file Projektplan.mpp)

Note of the change: updated project plan

Last finish stays 2014-09-02. Complete tasks 2 → 4.

Changed:

| ID | Task | Start | Finish | Complete | Total float |
| --- | --- | --- | --- | --- | --- |
| 42 | **Grundgerüst der Seite** |  |  | 44% → 94% |  |
| 43 | Datenbankschema |  |  | 25% → 50% | 0.75d → 27.12d |
| 44 | PHP Framework |  | 2014-06-09 A | 25% → 100% | 1d → none |
| 45 | User Login |  | 2014-06-12 A | 75% → 100% | 23.62d → none |
| 46 | **Interface** |  |  | 5% → 8% |  |
| 49 | **Prototyping** | 2014-06-05 A |  | 0% → 33% |  |
| 50 | Axure Prototype erstellen | 2014-06-05 A |  | 0% → 50% |  |

## Version 5 (data date 2014-06-10, saved 2014-06-10, file Projektplan.mpp)

Note of the change: updated project plan

Last finish 2014-09-02 → 2014-09-05 (+3d). Complete tasks 4 → 6.

Added:

| ID | Task | Duration | Start | Finish | Predecessors | Resources |
| --- | --- | --- | --- | --- | --- | --- |
| 19 | Parsen der Ergebnisse | 2d | 2014-08-26 | 2014-09-01 | 18 | David |
| 36 | Parsen der Ergebnisse | 2d | 2014-08-19 | 2014-08-25 | 35 | David |
| 56 | Screendesign Suche | 2d | 2014-06-23 | 2014-06-26 | 55 | Felix |

Changed:

| ID | Task | Start | Finish | Duration | Complete | Total float | Predecessors | Other |
| --- | --- | --- | --- | --- | --- | --- | --- | --- |
| 1 | **Wettbewerbsanalyse** |  |  |  | 31% → 80% |  |  |  |
| 2 | Alternativen recherchieren |  |  |  | 50% → 75% | 0.12d → 1.12d |  |  |
| 3 | Mediatheken explorieren |  |  |  | 25% → 75% | 0.23d → 0.28d |  |  |
| 4 | Einschätzung der Mediatheken | 2014-06-02 A | 2014-06-03 A |  | 0% → 100% | 2.5d → none |  |  |
| 5 | Featurematrix erstellen |  |  |  | 50% → 75% |  |  |  |
| 6 | Featurematrix abgeschlossen | 2014-06-12 A |  |  | 0% → 50% |  |  |  |
| 7 | **Mediatheken einbinden** |  | 2014-08-25 → 2014-09-01 (+7d) | 20.18d → 22.43d |  | 0.25d → 0d |  |  |
| 9 | **"ZDF" Mediathek** |  | 2014-08-25 → 2014-09-01 (+7d) | 18.5d → 20.75d |  | 0.25d → 0d |  |  |
| 16 | **Browsing in "ZDF"** |  | 2014-08-25 → 2014-09-01 (+7d) | 18.5d → 20.75d |  | 0.25d → 0d |  |  |
| 17 | Exploration der IA der Mediathek |  | 2014-06-26 → 2014-06-30 (+4d) | 2d → 3d |  | 14.5d → 13.5d |  | resources Tobias [75%] → Tobias [50%] |
| 20 | Browsing in Mediatheken abgeschlossen | 2014-08-25 → 2014-09-01 (+7d) | 2014-08-25 → 2014-09-01 (+7d) |  |  | 0.25d → 0d | 18 → 19 |  |
| 25 | "ZDF" Mediathek eingebunden |  |  |  |  | 4.42d → 6.42d |  | resources none → Lukas |
| 26 | **"Das Erste" Mediathek** |  | 2014-08-19 → 2014-08-25 (+6d) | 17d → 18.5d |  | 0d → 0.25d |  |  |
| 33 | **Browsing in "Das Erste"** |  | 2014-08-19 → 2014-08-25 (+6d) | 17d → 18.5d |  | 0d → 0.25d |  |  |
| 34 | Exploration der IA's der Mediatheken |  | 2014-06-26 → 2014-06-23 (-3d) | 2d → 1d |  | 12.5d → 13.5d |  | resources Tobias [75%] → Tobias [50%] |
| 35 | Entwicklung Queries |  |  |  |  |  |  | resources Lukas → Lukas [50%] |
| 37 | Browsing in Mediatheken abgeschlossen | 2014-08-19 → 2014-08-25 (+6d) | 2014-08-19 → 2014-08-25 (+6d) |  |  | 0d → 0.25d | 35 → 36 |  |
| 42 | "Das Erste" Mediathek eingebunden |  |  |  |  | 2.67d → 4.42d |  | resources none → Lukas |
| 43 | Kombination Suchalgorithmen | 2014-08-19 → 2014-08-26 (+7d) | 2014-08-25 → 2014-09-01 (+7d) |  |  |  |  |  |
| 44 | **Grundgerüst der Seite** |  | 2014-06-12 A |  | 94% → 100% | 23.62d → none |  |  |
| 45 | Datenbankschema |  | 2014-06-02 A |  | 50% → 100% | 27.12d → none |  |  |
| 48 | **Interface** |  | 2014-08-26 → 2014-09-01 (+6d) | 24.25d? → 26.25d | 8% → 7% |  |  |  |
| 52 | Axure Prototype erstellen |  |  |  |  |  |  | resources David [50%]; Felix [50%]; Lukas [50%]; Tobias [50%] → Felix [50%]; Tobias [50%] |
| 54 | **Screendesign** |  | 2014-07-03 → 2014-07-10 (+7d) | 5.62d → 7.25d |  |  |  |  |
| 57 | Screendesign Persönlicher Bereich | 2014-06-23 → 2014-06-30 (+7d) | 2014-06-26 → 2014-07-03 (+7d) |  |  |  | 55 → 56 |  |
| 58 | Screendesign Sendungsbereich | 2014-06-30 → 2014-07-03 (+3d) | 2014-07-03 → 2014-07-10 (+7d) |  |  |  |  |  |
| 59 | Screendesign abgeschlossen | 2014-07-03 → 2014-07-10 (+7d) | 2014-07-03 → 2014-07-10 (+7d) |  |  | 0d → 0.12d |  |  |
| 60 | **Technische Umsetzung** | 2014-07-03 → 2014-07-10 (+7d) | 2014-08-26 → 2014-09-01 (+6d) | 14.38d? → 14.62d |  |  |  |  |
| 61 | **Startseite** | 2014-07-03 → 2014-07-10 (+7d) | 2014-07-29 → 2014-08-05 (+7d) |  |  |  |  |  |
| 62 | Beliebte Sendungen | 2014-07-03 → 2014-07-10 (+7d) | 2014-07-10 → 2014-07-17 (+7d) |  |  |  |  |  |
| 63 | Neue Sendungen | 2014-07-10 → 2014-07-17 (+7d) | 2014-07-17 → 2014-07-22 (+5d) |  |  |  |  |  |
| 64 | Kategorisierung | 2014-07-17 → 2014-07-22 (+5d) | 2014-07-22 → 2014-07-29 (+7d) |  |  |  |  |  |
| 65 | Filterung | 2014-07-22 → 2014-07-29 (+7d) | 2014-07-29 → 2014-08-05 (+7d) |  |  |  |  |  |
| 66 | Grundgerüst der Startseite abgeschlossen | 2014-07-29 → 2014-08-05 (+7d) | 2014-07-29 → 2014-08-05 (+7d) |  |  |  |  |  |
| 67 | Suche | 2014-07-03 → 2014-07-10 (+7d) | 2014-07-10 → 2014-07-17 (+7d) |  |  | 12.38d → 12.62d |  | resources none → Tobias |
| 68 | Sendung-Detailsseite | 2014-07-03 → 2014-07-10 (+7d) | 2014-07-10 → 2014-07-17 (+7d) |  |  | 12.38d → 12.62d |  | resources none → Tobias |
| 69 | **Persönlicher Bereich** | 2014-07-03 → 2014-07-10 (+7d) | 2014-08-26 → 2014-09-01 (+6d) | 14.38d? → 14.62d |  |  |  |  |
| 70 | Dashboard (Übersicht) | 2014-07-03 → 2014-07-10 (+7d) | 2014-07-08 → 2014-07-14 (+6d) | 1d? → 1d |  | 8.12d → 8.38d |  | resources none → Tobias |
| 71 | Reminder & Abos | 2014-07-08 → 2014-07-15 (+7d) | 2014-07-15 → 2014-07-21 (+6d) |  |  | 8.12d → 8.5d |  |  |
| 72 | Playlisten | 2014-07-15 → 2014-07-21 (+6d) | 2014-07-22 → 2014-07-24 (+2d) |  |  | 8.12d → 8d |  |  |
| 73 | Merkliste | 2014-07-22 → 2014-07-28 (+6d) | 2014-07-28 → 2014-07-31 (+3d) |  |  | 8d → 8.25d |  |  |
| 74 | Grundgerüst des persönlichen Bereichs abgeschlossen | 2014-08-26 → 2014-09-01 (+6d) | 2014-08-26 → 2014-09-01 (+6d) |  |  |  |  |  |
| 75 | **Design-Umsetzung** | 2014-07-29 → 2014-08-05 (+7d) | 2014-08-19 → 2014-08-25 (+6d) | 5.75d → 5.5d |  |  |  |  |
| 76 | Umsetzung Startseite | 2014-07-29 → 2014-08-05 (+7d) | 2014-08-05 → 2014-08-12 (+7d) |  |  |  |  |  |
| 77 | Umsetzung Sendung-Detailseite | 2014-08-05 → 2014-08-12 (+7d) | 2014-08-12 → 2014-08-19 (+7d) |  |  |  |  |  |
| 78 | Umsetzung Persönlicher Bereich | 2014-08-12 → 2014-08-19 (+7d) | 2014-08-19 → 2014-08-25 (+6d) |  |  |  |  |  |
| 79 | Anpassungen (Design) | 2014-08-19 → 2014-08-26 (+7d) | 2014-08-21 → 2014-08-28 (+7d) |  |  |  |  |  |
| 80 | Browserspezifische Anpassungen | 2014-08-21 → 2014-08-28 (+7d) | 2014-08-25 → 2014-09-01 (+7d) |  |  |  |  |  |
| 81 | Interface abgeschlossen | 2014-08-26 → 2014-09-01 (+6d) | 2014-08-26 → 2014-09-01 (+6d) |  |  |  |  |  |
| 82 | **Testing** | 2014-08-26 → 2014-09-01 (+6d) | 2014-09-02 → 2014-09-05 (+3d) | 2.88d → 3.88d |  |  |  |  |
| 83 | Softwaretests | 2014-08-26 → 2014-09-01 (+6d) | 2014-09-01 → 2014-09-04 (+3d) | 2d → 2.38d |  |  |  |  |
| 84 | Usability-Test | 2014-09-01 → 2014-09-04 (+3d) | 2014-09-02 → 2014-09-05 (+3d) |  |  |  |  |  |

## Version 6 (data date 2014-06-17, saved 2014-06-17, file Projektplan.mpp)

Note of the change: project plan and reports

Last finish 2014-09-05 → 2014-09-10 (+5d). Complete tasks 6 → 10.

Added:

| ID | Task | Duration | Start | Finish | Predecessors | Resources |
| --- | --- | --- | --- | --- | --- | --- |
| 54 | Prototype iterieren | 2d | 2014-06-17 | 2014-06-23 | 53 | Felix [50%]; Tobias [50%] |
| 55 | Prototype erneut testen | 1d | 2014-06-24 | 2014-06-24 | 54 |  |

Changed:

| ID | Task | Start | Finish | Duration | Complete | Total float | Other |
| --- | --- | --- | --- | --- | --- | --- | --- |
| 1 | **Wettbewerbsanalyse** |  | 2014-06-12 A |  | 80% → 100% | 0d → none |  |
| 2 | Alternativen recherchieren |  | 2014-06-05 A |  | 75% → 100% | 1.12d → none |  |
| 3 | Mediatheken explorieren |  | 2014-06-12 A |  | 75% → 100% | 0.28d → none |  |
| 5 | Featurematrix erstellen |  | 2014-06-12 A |  | 75% → 100% | 0d → none |  |
| 6 | Featurematrix abgeschlossen |  | 2014-06-12 A |  | 50% → 100% | 0d → none |  |
| 7 | **Mediatheken einbinden** |  | 2014-09-01 → 2014-09-05 (+4d) | 22.43d → 26.43d | 1% → 5% |  |  |
| 8 | API's recherchieren |  |  |  | 25% → 75% | 4.5d → 0d |  |
| 9 | **"ZDF" Mediathek** | 2014-06-19 A | 2014-09-01 → 2014-09-05 (+4d) | 20.75d → 24.75d | 0% → 4% |  |  |
| 10 | **Suchen in "ZDF"** | 2014-06-19 A |  |  | 0% → 13% | 6.5d → 10.05d |  |
| 11 | Exploration der Suchfunktionen von "ZDF" | 2014-06-19 A |  |  | 0% → 25% | 4.5d → 0.95d |  |
| 12 | Entwicklung Queries | 2014-06-23 A |  |  | 0% → 25% | 4.92d → 10.05d |  |
| 16 | **Browsing in "ZDF"** |  | 2014-09-01 → 2014-09-05 (+4d) | 20.75d → 24.75d |  |  |  |
| 18 | Entwicklung Queries | 2014-08-14 → 2014-08-28 (+14d) | 2014-08-25 → 2014-09-03 (+9d) |  |  |  |  |
| 19 | Parsen der Ergebnisse | 2014-08-26 → 2014-09-03 (+8d) | 2014-09-01 → 2014-09-05 (+4d) |  |  |  |  |
| 20 | Browsing in Mediatheken abgeschlossen | 2014-09-01 → 2014-09-05 (+4d) | 2014-09-01 → 2014-09-05 (+4d) |  |  |  |  |
| 26 | **"Das Erste" Mediathek** |  | 2014-08-25 → 2014-09-03 (+9d) | 18.5d → 22.75d |  | 0.25d → 0d |  |
| 33 | **Browsing in "Das Erste"** |  | 2014-08-25 → 2014-09-03 (+9d) | 18.5d → 22.75d |  | 0.25d → 0d |  |
| 35 | Entwicklung Queries | 2014-08-11 → 2014-08-21 (+10d) | 2014-08-19 → 2014-09-01 (+13d) |  |  |  |  |
| 36 | Parsen der Ergebnisse | 2014-08-19 → 2014-09-01 (+13d) | 2014-08-25 → 2014-09-03 (+9d) |  |  |  |  |
| 37 | Browsing in Mediatheken abgeschlossen | 2014-08-25 → 2014-09-03 (+9d) | 2014-08-25 → 2014-09-03 (+9d) |  |  | 0.25d → 0d | resources Tobias → Lukas |
| 43 | Kombination Suchalgorithmen | 2014-08-26 → 2014-09-03 (+8d) | 2014-09-01 → 2014-09-05 (+4d) |  |  |  |  |
| 48 | **Interface** |  | 2014-09-01 → 2014-09-05 (+4d) | 26.25d → 30.25d | 7% → 8% |  |  |
| 51 | **Prototyping** |  | 2014-06-16 → 2014-06-24 (+8d) | 2.12d → 5.12d | 33% → 27% |  |  |
| 52 | Axure Prototype erstellen |  |  |  | 50% → 80% | 0d → 0.38d |  |
| 56 | **Screendesign** | 2014-06-17 → 2014-06-24 (+7d) | 2014-07-10 → 2014-07-21 (+11d) | 7.25d → 7d |  |  |  |
| 57 | Screendesign Startseite | 2014-06-17 → 2014-06-24 (+7d) | 2014-06-23 → 2014-07-01 (+8d) |  |  |  |  |
| 58 | Screendesign Suche | 2014-06-23 → 2014-07-01 (+8d) | 2014-06-26 → 2014-07-08 (+12d) |  |  |  |  |
| 59 | Screendesign Persönlicher Bereich | 2014-06-30 → 2014-07-08 (+8d) | 2014-07-03 → 2014-07-14 (+11d) |  |  |  |  |
| 60 | Screendesign Sendungsbereich | 2014-07-03 → 2014-07-15 (+12d) | 2014-07-10 → 2014-07-21 (+11d) |  |  |  |  |
| 61 | Screendesign abgeschlossen | 2014-07-10 → 2014-07-21 (+11d) | 2014-07-10 → 2014-07-21 (+11d) |  |  | 0.12d → 0d |  |
| 62 | **Technische Umsetzung** | 2014-07-10 → 2014-07-21 (+11d) | 2014-09-01 → 2014-09-05 (+4d) | 14.62d → 16.25d |  |  |  |
| 63 | **Startseite** | 2014-07-10 → 2014-07-21 (+11d) | 2014-08-05 → 2014-08-14 (+9d) | 6.88d → 7.38d |  |  |  |
| 64 | Beliebte Sendungen | 2014-07-10 → 2014-07-21 (+11d) | 2014-07-17 → 2014-07-24 (+7d) |  |  |  |  |
| 65 | Neue Sendungen | 2014-07-17 → 2014-07-28 (+11d) | 2014-07-22 → 2014-07-31 (+9d) |  |  |  |  |
| 66 | Kategorisierung | 2014-07-22 → 2014-07-31 (+9d) | 2014-07-29 → 2014-08-07 (+9d) |  |  |  |  |
| 67 | Filterung | 2014-07-29 → 2014-08-07 (+9d) | 2014-08-05 → 2014-08-14 (+9d) |  |  |  |  |
| 68 | Grundgerüst der Startseite abgeschlossen | 2014-08-05 → 2014-08-14 (+9d) | 2014-08-05 → 2014-08-14 (+9d) |  |  |  |  |
| 69 | Suche | 2014-07-10 → 2014-07-21 (+11d) | 2014-07-17 → 2014-07-24 (+7d) |  |  | 12.62d → 13.25d |  |
| 70 | Sendung-Detailsseite | 2014-07-10 → 2014-07-21 (+11d) | 2014-07-17 → 2014-07-24 (+7d) |  |  | 12.62d → 13.25d |  |
| 71 | **Persönlicher Bereich** | 2014-07-10 → 2014-07-21 (+11d) | 2014-09-01 → 2014-09-05 (+4d) | 14.62d → 16.25d |  |  |  |
| 72 | Dashboard (Übersicht) | 2014-07-10 → 2014-07-21 (+11d) | 2014-07-14 → 2014-07-22 (+8d) |  |  | 8.38d → 8.5d |  |
| 73 | Reminder & Abos | 2014-07-15 → 2014-07-22 (+7d) | 2014-07-21 → 2014-07-29 (+8d) |  |  | 8.5d → 8.62d |  |
| 74 | Playlisten | 2014-07-21 → 2014-07-29 (+8d) | 2014-07-24 → 2014-08-05 (+12d) |  |  | 8d → 8.62d |  |
| 75 | Merkliste | 2014-07-28 → 2014-08-05 (+8d) | 2014-07-31 → 2014-08-11 (+11d) |  |  | 8.25d → 8.75d |  |
| 76 | Grundgerüst des persönlichen Bereichs abgeschlossen | 2014-09-01 → 2014-09-05 (+4d) | 2014-09-01 → 2014-09-05 (+4d) |  |  |  |  |
| 77 | **Design-Umsetzung** | 2014-08-05 → 2014-08-14 (+9d) | 2014-08-25 → 2014-09-02 (+8d) | 5.5d → 5.88d |  |  |  |
| 78 | Umsetzung Startseite | 2014-08-05 → 2014-08-14 (+9d) | 2014-08-12 → 2014-08-21 (+9d) |  |  |  |  |
| 79 | Umsetzung Sendung-Detailseite | 2014-08-12 → 2014-08-21 (+9d) | 2014-08-19 → 2014-08-28 (+9d) |  |  |  |  |
| 80 | Umsetzung Persönlicher Bereich | 2014-08-19 → 2014-08-28 (+9d) | 2014-08-25 → 2014-09-02 (+8d) |  |  |  |  |
| 81 | Anpassungen (Design) | 2014-08-26 → 2014-09-02 (+7d) | 2014-08-28 → 2014-09-04 (+7d) |  |  |  |  |
| 82 | Browserspezifische Anpassungen | 2014-08-28 → 2014-09-04 (+7d) | 2014-09-01 → 2014-09-05 (+4d) |  |  |  |  |
| 83 | Interface abgeschlossen | 2014-09-01 → 2014-09-05 (+4d) | 2014-09-01 → 2014-09-05 (+4d) |  |  |  |  |
| 84 | **Testing** | 2014-09-01 → 2014-09-05 (+4d) | 2014-09-05 → 2014-09-10 (+5d) | 3.88d → 2.88d |  |  |  |
| 85 | Softwaretests | 2014-09-01 → 2014-09-05 (+4d) | 2014-09-04 → 2014-09-09 (+5d) | 2.38d → 2d |  |  |  |
| 86 | Usability-Test | 2014-09-04 → 2014-09-09 (+5d) | 2014-09-05 → 2014-09-10 (+5d) | 0.88d → 1d |  |  |  |

## Version 7 (data date 2014-06-25, saved 2014-06-25, file Projektplan_05.mpp)

Note of the change: Projektplan-Update

Last finish stays 2014-09-10. Complete tasks 10 → 14.

Changed:

| ID | Task | Start | Finish | Duration | Complete | Total float | Other |
| --- | --- | --- | --- | --- | --- | --- | --- |
| 1 | **Wettbewerbsanalyse** |  |  |  |  |  | baseline start none → 2014-06-02; baseline finish none → 2014-06-12 |
| 2 | Alternativen recherchieren |  |  |  |  |  | baseline start none → 2014-06-02; baseline finish none → 2014-06-05 |
| 3 | Mediatheken explorieren |  |  |  |  |  | baseline start none → 2014-06-05; baseline finish none → 2014-06-12 |
| 4 | Einschätzung der Mediatheken |  |  |  |  |  | baseline start none → 2014-06-02; baseline finish none → 2014-06-03 |
| 5 | Featurematrix erstellen |  |  |  |  |  | baseline start none → 2014-06-12; baseline finish none → 2014-06-12 |
| 6 | Featurematrix abgeschlossen |  |  |  |  |  | baseline start none → 2014-06-12; baseline finish none → 2014-06-12 |
| 7 | **Mediatheken einbinden** |  |  |  | 5% → 4% |  |  |
| 9 | **"ZDF" Mediathek** |  |  |  | 4% → 2% |  |  |
| 10 | **Suchen in "ZDF"** |  |  |  | 13% → 6% |  |  |
| 11 | Exploration der Suchfunktionen von "ZDF" |  |  |  | 25% → 50% | 0.95d → 10d |  |
| 12 | Entwicklung Queries | 2014-06-23 A → 2014-06-23 |  |  | 25% → 0% |  |  |
| 34 | Exploration der IA's der Mediatheken |  |  |  |  | 13.5d → 17d | resources Tobias [50%] → Lukas [50%] |
| 44 | **Grundgerüst der Seite** |  |  |  |  |  | baseline start none → 2014-06-02; baseline finish none → 2014-06-12 |
| 45 | Datenbankschema |  |  |  |  |  | baseline start none → 2014-06-02; baseline finish none → 2014-06-02 |
| 46 | PHP Framework |  | 2014-06-09 A → 2014-06-10 A (+1d) | 2d → 2.5d |  |  | baseline start none → 2014-06-03; baseline finish none → 2014-06-09 |
| 47 | User Login |  |  |  |  |  | baseline start none → 2014-06-09; baseline finish none → 2014-06-12 |
| 48 | **Interface** |  |  |  | 8% → 18% |  | baseline start none → 2014-06-02; baseline finish none → 2014-09-04 |
| 49 | Sketching |  |  |  |  |  | baseline start none → 2014-06-02; baseline finish none → 2014-06-05 |
| 50 | UI Entwürfe abgschlossen |  |  |  |  |  | baseline start none → 2014-06-05; baseline finish none → 2014-06-05 |
| 51 | **Prototyping** |  | 2014-06-24 A | 5.12d → 4.62d | 27% → 100% | 0d → none |  |
| 52 | Axure Prototype erstellen |  | 2014-06-12 → 2014-06-19 A (+7d) | 2d → 4d | 80% → 100% | 0.38d → none |  |
| 53 | Prototype testen | 2014-06-12 A | 2014-06-16 → 2014-06-12 A (-4d) | 1d → 0.5d | 0% → 100% | 0.25d → none |  |
| 54 | Prototype iterieren | 2014-06-17 A | 2014-06-23 → 2014-06-17 A (-6d) | 2d → 0.5d | 0% → 100% | 0d → none |  |
| 55 | Prototype erneut testen | 2014-06-24 A | 2014-06-24 A | 1d → 0.5d | 0% → 100% | 0d → none |  |
| 56 | **Screendesign** | 2014-06-24 A |  |  | 0% → 4% |  |  |
| 57 | Screendesign Startseite | 2014-06-24 A |  |  | 0% → 15% |  |  |
| 79 | Umsetzung Sendung-Detailseite |  |  |  |  |  | resources Felix [50%]; Tobias [25%] → Felix [50%]; Tobias [32.5%] |
| 83 | Interface abgeschlossen |  |  |  |  |  | constraint as late as possible → none |
| 84 | **Testing** |  |  | 2.88d → 3d |  |  |  |
| 86 | Usability-Test |  |  | 1d → 1.12d |  |  |  |

## Version 8 (data date 2014-06-26, saved 2014-06-26, file Projektplan_05.mpp)

Note of the change: updated project plan

Last finish 2014-09-10 → 2014-09-01 (-9d). Complete tasks 14 → 16.

Changed:

| ID | Task | Start | Finish | Duration | Complete | Total float | Predecessors | Other |
| --- | --- | --- | --- | --- | --- | --- | --- | --- |
| 7 | **Mediatheken einbinden** |  | 2014-09-05 → 2014-08-21 (-15d) | 26.43d → 19.68d | 4% → 6% |  |  |  |
| 9 | **"ZDF" Mediathek** |  | 2014-09-05 → 2014-08-21 (-15d) | 24.75d → 18d | 2% → 4% |  |  |  |
| 14 | Darstellung der Ergebnisse |  |  |  |  | 10.05d → 3.55d |  | resources David [50%]; Lukas [50%] → Lukas [50%] |
| 16 | **Browsing in "ZDF"** | 2014-06-19 A | 2014-09-05 → 2014-08-21 (-15d) | 24.75d → 18d | 0% → 6% |  |  |  |
| 17 | Exploration der IA der Mediathek | 2014-06-19 A | 2014-06-30 → 2014-06-19 A (-11d) | 3d → 0.3d | 0% → 100% | 17d → none |  | resources Tobias [50%] → Lukas |
| 18 | Entwicklung Queries | 2014-08-28 → 2014-08-05 (-23d) | 2014-09-03 → 2014-08-14 (-20d) |  |  |  |  | resources Lukas → Lukas [50%] |
| 19 | Parsen der Ergebnisse | 2014-09-03 → 2014-08-14 (-20d) | 2014-09-05 → 2014-08-21 (-15d) |  |  |  |  | resources David → David [50%] |
| 20 | Browsing in Mediatheken abgeschlossen | 2014-09-05 → 2014-08-21 (-15d) | 2014-09-05 → 2014-08-21 (-15d) |  |  |  |  |  |
| 26 | **"Das Erste" Mediathek** | 2014-06-19 A | 2014-09-03 → 2014-08-14 (-20d) | 22.75d → 16.32d | 0% → 1% |  |  |  |
| 33 | **Browsing in "Das Erste"** | 2014-06-19 A | 2014-09-03 → 2014-07-22 (-43d) | 22.75d → 9.5d | 0% → 6% | 0d → 6.83d |  |  |
| 34 | Exploration der IA's der Mediathek | 2014-06-19 A | 2014-06-23 → 2014-06-19 A (-4d) | 1d → 0.3d | 0% → 100% | 17d → none |  | was named Exploration der IA's der Mediatheken |
| 35 | Entwicklung Queries | 2014-08-21 → 2014-07-08 (-44d) | 2014-09-01 → 2014-07-17 (-46d) |  |  | 0d → 6.5d |  | constraint as late as possible → start no earlier than 2014-07-08 |
| 36 | Parsen der Ergebnisse | 2014-09-01 → 2014-07-17 (-46d) | 2014-09-03 → 2014-07-22 (-43d) |  |  | 0d → 6.5d |  |  |
| 37 | Browsing in Mediatheken abgeschlossen | 2014-09-03 → 2014-07-22 (-43d) | 2014-09-03 → 2014-07-22 (-43d) |  |  | 0d → 6.83d |  |  |
| 38 | **Streamen von "Das Erste"** | 2014-07-15 → 2014-07-22 (+7d) | 2014-08-05 → 2014-08-12 (+7d) |  |  | 8.3d → 0d |  |  |
| 39 | Streaming | 2014-07-15 → 2014-07-22 (+7d) | 2014-07-31 → 2014-08-07 (+7d) |  |  | 8.25d → 0d |  | constraint none → start no earlier than 2014-07-22 |
| 40 | Dateitypen / Player & Grundlagen | 2014-07-31 → 2014-08-07 (+7d) | 2014-08-05 → 2014-08-12 (+7d) |  |  | 8.25d → 0d |  | resources Lukas [50%]; David [50%] → Lukas [50%] |
| 41 | Streaming in Seite einbinden | 2014-08-05 → 2014-08-12 (+7d) | 2014-08-07 → 2014-08-14 (+7d) |  |  | 8.43d → 0d |  |  |
| 42 | "Das Erste" Mediathek eingebunden | 2014-08-07 → 2014-08-14 (+7d) | 2014-08-07 → 2014-08-14 (+7d) |  |  | 8.43d → 0d |  |  |
| 43 | Kombination Suchalgorithmen | 2014-09-03 → 2014-08-14 (-20d) | 2014-09-05 → 2014-08-21 (-15d) |  |  |  |  | resources David [50%] → Lukas [50%] |
| 48 | **Interface** |  | 2014-09-05 → 2014-08-21 (-15d) | 30.25d → 23.5d | 18% → 20% |  |  |  |
| 56 | **Screendesign** |  |  |  | 4% → 6% | 0d → 9.5d |  |  |
| 57 | Screendesign Startseite |  |  |  | 15% → 25% | 0d → 1.07d |  |  |
| 62 | **Technische Umsetzung** | 2014-07-21 → 2014-07-01 (-20d) | 2014-09-05 → 2014-08-21 (-15d) | 16.25d → 14.75d |  |  | 61, 46 → 46 |  |
| 63 | **Startseite** | 2014-07-21 → 2014-07-01 (-20d) | 2014-08-14 → 2014-07-24 (-21d) | 7.38d → 7.25d |  |  | none → 57 |  |
| 64 | Beliebte Sendungen | 2014-07-21 → 2014-07-01 (-20d) | 2014-07-24 → 2014-07-03 (-21d) | 2d → 1d |  | 0d → 0.57d |  | resources Felix [50%]; Tobias [25%] → Tobias [75%] |
| 65 | Neue Sendungen | 2014-07-28 → 2014-07-03 (-25d) | 2014-07-31 → 2014-07-10 (-21d) |  |  | 0d → 0.5d |  |  |
| 66 | Kategorisierung | 2014-07-31 → 2014-07-10 (-21d) | 2014-08-07 → 2014-07-17 (-21d) |  |  | 0d → 0.38d |  |  |
| 67 | Filterung | 2014-08-07 → 2014-07-17 (-21d) | 2014-08-14 → 2014-07-22 (-23d) |  |  | 0d → 0.62d |  |  |
| 68 | Grundgerüst der Startseite abgeschlossen | 2014-08-14 → 2014-07-24 (-21d) | 2014-08-14 → 2014-07-24 (-21d) |  |  |  |  |  |
| 69 | Suche | 2014-07-21 → 2014-07-08 (-13d) | 2014-07-24 → 2014-07-14 (-10d) |  |  | 13.25d → 11.32d | none → 58 |  |
| 70 | Sendung-Detailsseite |  |  |  |  | 13.25d → 7.5d | none → 60 |  |
| 71 | **Persönlicher Bereich** | 2014-07-21 → 2014-07-15 (-6d) | 2014-09-05 → 2014-08-21 (-15d) | 16.25d → 11.25d |  |  | none → 59 |  |
| 72 | Dashboard (Übersicht) | 2014-07-21 → 2014-07-15 (-6d) | 2014-07-22 → 2014-07-17 (-5d) |  |  | 8.5d → 5.58d |  |  |
| 73 | Reminder & Abos | 2014-07-22 → 2014-07-17 (-5d) | 2014-07-29 → 2014-07-22 (-7d) |  |  | 8.62d → 5.58d |  |  |
| 74 | Playlisten | 2014-07-29 → 2014-07-22 (-7d) | 2014-08-05 → 2014-07-29 (-7d) |  |  | 8.62d → 5.7d |  | resources Felix [50%] → Tobias [50%] |
| 75 | Merkliste | 2014-08-05 → 2014-07-29 (-7d) | 2014-08-11 → 2014-07-31 (-11d) | 2d → 1d |  | 8.75d → 5.62d |  | resources Felix [50%]; Tobias [25%] → Tobias [50%] |
| 76 | Grundgerüst des persönlichen Bereichs abgeschlossen | 2014-09-05 → 2014-08-21 (-15d) | 2014-09-05 → 2014-08-21 (-15d) |  |  |  |  |  |
| 77 | **Design-Umsetzung** | 2014-08-14 → 2014-07-24 (-21d) | 2014-09-02 → 2014-08-14 (-19d) | 5.88d → 5.83d |  |  |  |  |
| 78 | Umsetzung Startseite | 2014-08-14 → 2014-07-24 (-21d) | 2014-08-21 → 2014-08-04 (-17d) |  |  |  |  |  |
| 79 | Umsetzung Sendung-Detailseite | 2014-08-21 → 2014-08-04 (-17d) | 2014-08-28 → 2014-08-07 (-21d) |  |  |  |  |  |
| 80 | Umsetzung Persönlicher Bereich | 2014-08-28 → 2014-08-07 (-21d) | 2014-09-02 → 2014-08-14 (-19d) |  |  |  |  |  |
| 81 | Anpassungen (Design) | 2014-09-02 → 2014-08-14 (-19d) | 2014-09-04 → 2014-08-19 (-16d) |  |  |  |  |  |
| 82 | Browserspezifische Anpassungen | 2014-09-04 → 2014-08-19 (-16d) | 2014-09-05 → 2014-08-21 (-15d) |  |  |  |  |  |
| 83 | Interface abgeschlossen | 2014-09-05 → 2014-08-21 (-15d) | 2014-09-05 → 2014-08-21 (-15d) |  |  |  |  |  |
| 84 | **Testing** | 2014-09-05 → 2014-08-21 (-15d) | 2014-09-10 → 2014-09-01 (-9d) | 3d → 2.7d |  |  |  |  |
| 85 | Softwaretests | 2014-09-05 → 2014-08-21 (-15d) | 2014-09-09 → 2014-08-28 (-12d) |  |  |  |  |  |
| 86 | Usability-Test | 2014-09-09 → 2014-08-28 (-12d) | 2014-09-10 → 2014-09-01 (-9d) | 1.12d → 1d |  |  |  |  |

## Version 9 (data date 2014-06-30, saved 2014-06-30, file Projektplan_05.mpp)

Note of the change: Merge remote-tracking branch 'origin/master' into streaming

Last finish stays 2014-09-01.

Changed:

| ID | Task | Complete |
| --- | --- | --- |
| 56 | **Screendesign** | 6% → 10% |
| 57 | Screendesign Startseite | 25% → 40% |

## Version 10 (data date 2014-07-08, saved 2014-07-08, file Projektplan_05.mpp)

Note of the change: project plan updates

Last finish stays 2014-09-01. Complete tasks 16 → 19.

Changed:

| ID | Task | Start | Finish | Duration | Complete | Total float | Other |
| --- | --- | --- | --- | --- | --- | --- | --- |
| 7 | **Mediatheken einbinden** |  |  |  | 6% → 47% |  |  |
| 9 | **"ZDF" Mediathek** |  |  |  | 4% → 47% |  |  |
| 10 | **Suchen in "ZDF"** |  |  |  | 6% → 71% | 3.55d → 0d |  |
| 11 | Exploration der Suchfunktionen von "ZDF" |  | 2014-06-23 A |  | 50% → 100% | 4d → none |  |
| 12 | Entwicklung Queries | 2014-06-23 A | 2014-07-01 A |  | 0% → 100% | 3.75d → none |  |
| 13 | Parsen der Ergebnisse | 2014-07-01 A |  |  | 0% → 75% | 3.75d → 0.2d |  |
| 14 | Darstellung der Ergebnisse | 2014-07-08 A |  |  | 0% → 10% | 3.55d → 0d |  |
| 15 | Suchen in Mediatheken abgeschlossen | 2014-07-15 A |  |  | 0% → 60% | 3.55d → 0d |  |
| 16 | **Browsing in "ZDF"** |  |  |  | 6% → 15% |  |  |
| 18 | Entwicklung Queries | 2014-08-05 A |  |  | 0% → 10% |  |  |
| 19 | Parsen der Ergebnisse | 2014-08-14 A |  |  | 0% → 10% |  |  |
| 20 | Browsing in Mediatheken abgeschlossen | 2014-08-21 A |  |  | 0% → 10% |  |  |
| 21 | **Streamen von "ZDF"** | 2014-07-15 A |  |  | 0% → 46% | 3.55d → 0.3d |  |
| 22 | Streaming | 2014-07-15 A |  |  | 0% → 50% | 3.55d → 0d | resources Lukas [50%]; David [50%] → David [50%] |
| 23 | Dateitypen / Player & Grundlagen | 2014-07-31 A |  |  | 0% → 25% | 3.75d → 0.3d | resources Lukas [50%]; David [50%] → David [50%] |
| 24 | Streaming in Seite einbinden | 2014-08-05 A |  |  | 0% → 30% |  |  |
| 25 | "ZDF" Mediathek eingebunden | 2014-08-07 A |  |  | 0% → 30% |  |  |
| 26 | **"ARD" Mediathek** |  |  |  | 1% → 40% | 0d → 1.12d | was named "Das Erste" Mediathek |
| 27 | **Suchen in "ARD"** | 2014-06-19 A |  | 6.95d → 7.15d | 0% → 57% | 2d → 1.8d | was named Suchen in "Das Erste" |
| 28 | Exploration der Suchfunktionen von "ARD" | 2014-06-19 A | 2014-06-23 → 2014-06-26 A (+3d) |  | 0% → 100% | 2d → none | was named Exploration der Suchfunktionen von "Das Erste"; resources David [50%] → Lukas [50%] |
| 29 | Entwicklung Queries | 2014-06-23 A | 2014-07-01 → 2014-07-03 (+2d) | 3d → 0.95d | 0% → 75% | 2d → 1.12d | resources David [50%] → Lukas [50%] |
| 30 | Parsen der Ergebnisse | 2014-07-01 → 2014-07-03 A (+2d) |  |  | 0% → 75% | 2d → 0.1d | resources David [50%] → Lukas [50%] |
| 31 | Darstellung der Ergebnisse | 2014-07-08 A |  |  | 0% → 10% | 2d → 1.8d | resources David [50%]; Lukas [50%] → Lukas [50%] |
| 32 | Suchen in Mediatheken abgeschlossen | 2014-07-15 A |  |  | 0% → 10% | 2d → 1.8d |  |
| 36 | Parsen der Ergebnisse |  |  |  |  | 6.5d → 7.83d | resources David → Lukas |
| 37 | Browsing in Mediathek abgeschlossen |  |  |  |  | 6.83d → 7.95d | was named Browsing in Mediatheken abgeschlossen |
| 38 | **Streamen von "Das Erste"** | 2014-07-22 A |  |  | 0% → 50% | 0d → 0.62d |  |
| 39 | Streaming | 2014-07-22 A |  |  | 0% → 50% |  | resources Lukas [50%]; David [50%] → Lukas [50%] |
| 40 | Dateitypen / Player & Grundlagen | 2014-08-07 A |  |  | 0% → 50% | 0d → 0.62d |  |
| 41 | Streaming in Seite einbinden | 2014-08-12 A |  |  | 0% → 50% | 0d → 1.12d |  |
| 42 | "Das Erste" Mediathek eingebunden | 2014-08-14 A |  |  | 0% → 50% | 0d → 1.12d |  |
| 43 | Kombination Suchalgorithmen | 2014-08-14 A |  |  | 0% → 75% |  |  |
| 48 | **Interface** |  |  |  | 20% → 29% |  |  |
| 56 | **Screendesign** |  |  |  | 10% → 56% |  |  |
| 57 | Screendesign Startseite |  |  |  | 40% → 75% |  |  |
| 58 | Screendesign Suche | 2014-07-01 A |  |  | 0% → 75% | 5.5d → 1.5d |  |
| 60 | Screendesign Sendungsbereich | 2014-07-15 A |  |  | 0% → 75% | 7.75d → 7.83d |  |

## Version 11 (data date 2014-07-08, saved 2014-07-08, file Projektplan_06.mpp)

Note of the change: project plan updates

Last finish stays 2014-09-01. Complete tasks 19 → 20.

Added:

| ID | Task | Duration | Start | Finish | Predecessors | Resources |
| --- | --- | --- | --- | --- | --- | --- |
| 14 | Filterung der Suchergebnisse | 2d | 2014-07-08 | 2014-07-15 | 13 | David |
| 32 | Filterung der Suchergebnisse | 2d | 2014-07-08 | 2014-07-15 | 31 |  |

Changed:

| ID | Task | Start | Finish | Duration | Complete | Total float | Other |
| --- | --- | --- | --- | --- | --- | --- | --- |
| 7 | **Mediatheken einbinden** |  |  |  | 47% → 42% |  |  |
| 8 | API's recherchieren |  | 2014-06-19 A |  | 75% → 100% | 0d → none |  |
| 9 | **"ZDF" Mediathek** |  |  |  | 47% → 43% |  |  |
| 10 | **Suchen in "ZDF"** |  |  |  | 71% → 57% | 0d → 11.05d |  |
| 16 | Suchen in Mediatheken abgeschlossen | 2014-07-15 A → 2014-07-15 |  |  | 60% → 0% |  |  |
| 26 | "ZDF" Mediathek eingebunden |  | 2014-08-07 A |  | 30% → 100% | 3.67d → none |  |
| 27 | **"ARD" Mediathek** |  |  |  | 40% → 36% |  |  |
| 28 | **Suchen in "ARD"** |  |  | 7.15d → 7.4d | 57% → 43% | 1.8d → 10.05d |  |
| 34 | Suchen in Mediatheken abgeschlossen | 2014-07-15 A → 2014-07-15 |  |  | 10% → 0% |  | resources David → Lukas |
| 35 | **Browsing in "Das Erste"** |  |  |  | 6% → 3% | 7.95d → 7.45d |  |
| 36 | Exploration der IA's der Mediathek |  | 2014-06-19 A → 2014-06-19 |  | 100% → 50% | none → 12.12d |  |
| 45 | Kombination Suchalgorithmen |  |  |  | 75% → 50% |  |  |
| 50 | **Interface** |  |  |  | 29% → 28% |  |  |
| 58 | **Screendesign** |  | 2014-07-21 → 2014-07-22 (+1d) | 7d → 7.5d | 56% → 47% | 9.5d → 9d |  |
| 59 | Screendesign Startseite |  | 2014-07-01 → 2014-07-03 (+2d) | 2d → 2.5d | 75% → 60% | 1.07d → 0.45d | resources Felix → Felix [50%]; Tobias [50%] |
| 60 | Screendesign Suche |  |  | 2d → 2.5d | 75% → 60% | 1.5d → 1d | resources Felix → Felix [50%]; Tobias [50%] |
| 61 | Screendesign Persönlicher Bereich |  | 2014-07-14 → 2014-07-15 (+1d) |  |  | 5.5d → 1d | resources Felix → Felix [50%]; Tobias [50%] |
| 62 | Screendesign Sendungsbereich |  | 2014-07-21 → 2014-07-22 (+1d) | 2d → 2.5d | 75% → 60% | 7.83d → 7.33d | resources Felix → Felix [50%]; Tobias [50%] |
| 63 | Screendesign abgeschlossen | 2014-07-21 → 2014-07-22 (+1d) | 2014-07-21 → 2014-07-22 (+1d) |  |  | 9.5d → 9d |  |
| 64 | **Technische Umsetzung** | 2014-07-01 → 2014-07-03 (+2d) |  | 14.75d → 14.12d |  |  |  |
| 65 | **Startseite** | 2014-07-01 → 2014-07-03 (+2d) |  | 7.25d → 6.62d |  |  |  |
| 66 | Beliebte Sendungen | 2014-07-01 → 2014-07-03 (+2d) | 2014-07-03 → 2014-07-07 (+4d) |  |  | 0.57d → 0.45d |  |
| 67 | Neue Sendungen | 2014-07-03 → 2014-07-07 (+4d) |  |  |  | 0.5d → 0d |  |
| 68 | Kategorisierung | 2014-07-10 → 2014-07-14 (+4d) |  |  |  | 0.38d → 0d |  |
| 69 | Filterung |  | 2014-07-22 → 2014-07-24 (+2d) |  |  | 0.62d → 0.12d |  |
| 71 | Suche |  | 2014-07-14 → 2014-07-15 (+1d) |  |  | 11.32d → 10.75d |  |
| 72 | Sendung-Detailsseite | 2014-07-21 → 2014-07-22 (+1d) | 2014-07-24 → 2014-07-28 (+4d) |  |  | 7.5d → 7.33d |  |
| 73 | **Persönlicher Bereich** |  |  | 11.25d → 10.75d |  |  |  |
| 75 | Reminder & Abos |  | 2014-07-22 → 2014-07-24 (+2d) |  |  | 5.58d → 5.08d |  |
| 76 | Playlisten | 2014-07-22 → 2014-07-24 (+2d) | 2014-07-29 → 2014-07-31 (+2d) |  |  | 5.7d → 5.08d |  |
| 77 | Merkliste | 2014-07-29 → 2014-07-31 (+2d) | 2014-07-31 → 2014-08-04 (+4d) |  |  | 5.62d → 5.08d |  |

## Version 12 (data date 2014-07-10, saved 2014-07-09, file Projektplan_07.mpp)

Note of the change: project plan updates

Last finish stays 2014-09-01. Complete tasks 20 → 19.

Added:

| ID | Task | Duration | Start | Finish | Predecessors |
| --- | --- | --- | --- | --- | --- |
| 89 | Projektabschluss | 0d | 2014-09-01 | 2014-09-01 | 86 |

Changed:

| ID | Task | Start | Finish | Duration | Complete | Total float | Other |
| --- | --- | --- | --- | --- | --- | --- | --- |
| 6 | Featurematrix abgeschlossen |  |  |  |  |  | resources Tobias → none |
| 7 | **Mediatheken einbinden** |  |  |  | 42% → 35% |  |  |
| 9 | **"ZDF" Mediathek** |  |  |  | 43% → 35% |  |  |
| 16 | Suchen in "ZDF" Mediathek abgeschlossen | 2014-07-15 A |  |  | 0% → 50% |  | was named Suchen in Mediatheken abgeschlossen; resources David → none |
| 17 | **Browsing in "ZDF"** |  |  |  | 15% → 9% |  |  |
| 19 | Entwicklung Queries | 2014-08-05 A → 2014-08-05 |  |  | 10% → 0% |  | resources Lukas [50%] → David [50%] |
| 21 | Browsing in "ZDF" Mediatheken abgeschlossen |  |  |  |  |  | was named Browsing in Mediatheken abgeschlossen; resources Tobias → none |
| 22 | **Streamen von "ZDF"** |  |  |  | 46% → 25% | 0.97d → 0.3d |  |
| 23 | Streaming |  |  |  | 50% → 25% | 0.8d → 0d |  |
| 26 | "ZDF" Mediathek eingebunden |  | 2014-08-07 A → 2014-08-07 |  | 100% → 30% | none → 3.67d |  |
| 27 | **"ARD" Mediathek** |  |  |  | 36% → 27% | 1.12d → 0.62d |  |
| 28 | **Suchen in "ARD"** |  |  | 7.4d → 7.15d |  | 10.05d → 9.8d |  |
| 32 | Filterung der Suchergebnisse |  |  |  |  | 10.05d → 9.8d | resources none → Lukas [50%] |
| 34 | Suchen in "ARD" Mediathek abgeschlossen | 2014-07-15 A |  |  | 0% → 35% |  | was named Suchen in Mediatheken abgeschlossen; resources Lukas → none |
| 35 | **Browsing in "ARD"** |  |  |  | 3% → 4% |  | was named Browsing in "Das Erste" |
| 36 | Exploration der IA's der Mediathek |  |  |  | 50% → 75% |  |  |
| 38 | Parsen der Ergebnisse |  |  |  |  |  | resources Lukas → Lukas [50%] |
| 39 | Browsing in "ARD" Mediathek abgeschlossen |  |  |  |  |  | was named Browsing in Mediathek abgeschlossen; resources Lukas → none |
| 40 | **Streamen von "ARD"** |  |  |  | 50% → 25% | 0.62d → 0.3d | was named Streamen von "Das Erste" |
| 41 | Streaming |  |  |  | 50% → 25% |  |  |
| 42 | Dateitypen / Player & Grundlagen |  |  |  | 50% → 25% | 0.62d → 0.3d |  |
| 43 | Streaming in Seite einbinden |  |  |  | 50% → 30% |  |  |
| 44 | "ARD" Mediathek eingebunden |  |  |  | 50% → 20% |  | was named "Das Erste" Mediathek eingebunden; resources Lukas → none |
| 52 | UI Entwürfe abgschlossen |  |  |  |  |  | resources Tobias → none |
| 57 | Prototype erneut testen |  |  |  |  |  | resources none → Felix [25%]; David [25%]; Tobias [25%] |
| 63 | Screendesign abgeschlossen | 2014-07-22 A |  |  | 0% → 50% |  | resources Felix → none |
| 67 | Neue Sendungen |  |  |  |  |  | resources Felix [50%]; Tobias [25%] → Felix [50%] |
| 68 | Kategorisierung |  |  |  |  |  | resources Felix [50%]; Tobias [25%] → Felix [50%] |
| 69 | Filterung |  |  |  |  |  | resources Felix [50%]; Tobias [25%] → Felix [50%] |
| 70 | Grundgerüst der Startseite abgeschlossen |  |  |  |  |  | resources Felix → none |
| 71 | Suche |  |  |  |  |  | resources Tobias → Tobias [50%] |
| 72 | Sendung-Detailsseite |  |  |  |  |  | resources Tobias → Tobias [50%] |
| 78 | Grundgerüst des persönlichen Bereichs abgeschlossen |  |  |  |  |  | resources Felix → none |
| 79 | **Design-Umsetzung** |  | 2014-08-14 → 2014-08-12 (-2d) | 5.83d → 4.7d |  |  |  |
| 80 | Umsetzung Startseite |  |  |  |  |  | resources Felix [50%]; Tobias [50%] → Felix [50%] |
| 81 | Umsetzung Sendung-Detailseite |  |  |  |  |  | resources Felix [50%]; Tobias [32.5%] → Felix [50%] |
| 82 | Umsetzung Persönlicher Bereich |  | 2014-08-14 → 2014-08-12 (-2d) | 2d → 1d |  |  | resources Felix [50%]; Tobias → Tobias [50%] |
| 83 | Anpassungen (Design) | 2014-08-14 → 2014-08-12 (-2d) |  | 1d → 2d |  |  | resources Tobias → Tobias [50%] |
| 84 | Browserspezifische Anpassungen |  |  |  |  |  | resources Tobias → Tobias [50%] |
| 85 | Interface abgeschlossen |  |  |  |  |  | resources Tobias → none |

## Version 13 (data date 2014-07-15, saved 2014-07-15, file Projektplan_07.mpp)

Note of the change: Merge branch 'streaming'

Last finish stays 2014-09-01. Complete tasks 19 → 20.

Changed:

| ID | Task | Start | Finish | Complete | Total float |
| --- | --- | --- | --- | --- | --- |
| 7 | **Mediatheken einbinden** |  |  | 35% → 38% |  |
| 9 | **"ZDF" Mediathek** |  |  | 35% → 37% |  |
| 10 | **Suchen in "ZDF"** |  |  | 57% → 60% |  |
| 15 | Darstellung der Ergebnisse |  |  | 10% → 25% |  |
| 27 | **"ARD" Mediathek** |  |  | 27% → 32% |  |
| 28 | **Suchen in "ARD"** |  |  | 43% → 47% |  |
| 33 | Darstellung der Ergebnisse |  |  | 10% → 25% |  |
| 35 | **Browsing in "ARD"** |  |  | 4% → 20% |  |
| 36 | Exploration der IA's der Mediathek |  | 2014-06-19 A | 75% → 100% | 12.12d → none |
| 37 | Entwicklung Queries | 2014-07-08 A |  | 0% → 25% |  |

## Version 14 (data date 2014-07-15, saved 2014-07-15, file Projektplan_08.mpp)

Note of the change: project plan update

Last finish stays 2014-09-01. Complete tasks 20 → 27.

Added:

| ID | Task | Duration | Start | Finish | Predecessors | Constraint | Resources |
| --- | --- | --- | --- | --- | --- | --- | --- |
| 45 | **"BR" Mediathek** | 4.75d | 2014-08-04 | 2014-08-19 | 44 |  |  |
| 46 | **Suchen in "BR"** | 4.75d | 2014-08-04 | 2014-08-19 |  |  |  |
| 47 | Exploration der Suchfunktionen von "BR" | 0.5d | 2014-08-04 | 2014-08-04 |  | start no earlier than 2014-08-04 | Lukas [50%] |
| 48 | Entwicklung Queries | 1d | 2014-08-05 | 2014-08-07 | 47 |  | Lukas [50%] |
| 49 | Parsen der Ergebnisse | 1d | 2014-08-07 | 2014-08-11 | 48 |  | Lukas [50%] |
| 50 | Filterung der Suchergebnisse | 2d | 2014-08-11 | 2014-08-14 | 49 |  | Lukas [50%] |
| 51 | Darstellung der Ergebnisse | 1d | 2014-08-18 | 2014-08-19 | 50 |  | Lukas [25%] |
| 52 | Suchen in "BR" Mediathek abgeschlossen | 0d | 2014-08-19 | 2014-08-19 | 51 |  | Lukas |
| 53 | **Browsing in "BR"** | 2d | 2014-08-04 | 2014-08-11 |  |  |  |
| 54 | Exploration der IA's der Mediathek | 0.5d | 2014-08-04 | 2014-08-04 |  |  | Lukas [50%] |
| 55 | Entwicklung Queries | 1d | 2014-08-05 | 2014-08-07 | 54 |  | Lukas [50%] |
| 56 | Parsen der Ergebnisse | 1d | 2014-08-07 | 2014-08-11 | 55 |  | Lukas [50%] |
| 57 | Browsing in "BR" Mediathek abgeschlossen | 0d | 2014-08-11 | 2014-08-11 | 56 |  | Lukas |
| 58 | **Streamen von "BR"** | 2.5d | 2014-08-04 | 2014-08-12 |  |  |  |
| 59 | Streaming | 2d | 2014-08-04 | 2014-08-07 |  |  | Lukas [50%] |
| 60 | Dateitypen / Player & Grundlagen | 1d | 2014-08-07 | 2014-08-12 | 59 |  | Lukas [50%] |
| 61 | Streaming in Seite einbinden | 1d | 2014-08-12 | 2014-08-14 | 58 |  | Lukas |
| 62 | **"Arte" Mediathek** | 2.58d | 2014-08-07 A | 2014-08-19 | 26 |  |  |
| 63 | **Suchen in "Arte"** | 2.58d | 2014-08-07 | 2014-08-19 |  |  |  |
| 64 | Exploration der Suchfunktionen von "Arte" | 0.2d | 2014-08-07 | 2014-08-07 |  |  | David [50%] |
| 65 | Entwicklung Queries | 1d | 2014-08-07 | 2014-08-12 | 64 |  | David [50%] |
| 66 | Parsen der Ergebnisse | 0.7d | 2014-08-12 | 2014-08-14 | 65 |  | David [50%] |
| 67 | Filterung der Suchergebnisse | 1d | 2014-08-14 | 2014-08-18 | 66 |  | David [50%] |
| 68 | Darstellung der Ergebnisse | 0.3d | 2014-08-18 | 2014-08-19 | 67 |  | David [50%] |
| 69 | Suchen in "Arte" Mediathek abgeschlossen | 0d | 2014-08-19 | 2014-08-19 | 68 |  | David |
| 70 | **Browsing in "Arte"** | 1.55d | 2014-08-07 A | 2014-08-14 |  |  |  |
| 71 | Exploration der IA's der Mediathek | 0.2d | 2014-08-07 A | 2014-08-07 A |  |  | David [50%] |
| 72 | Entwicklung Queries | 1d | 2014-08-07 | 2014-08-12 | 71 |  | David [50%] |
| 73 | Parsen der Ergebnisse | 0.6d | 2014-08-12 | 2014-08-14 | 72 |  | David [50%] |
| 74 | Browsing in "Arte" Mediathek abgeschlossen | 0d | 2014-08-14 | 2014-08-14 | 73 |  | David |
| 75 | **Streamen von "Arte"** | 1.02d | 2014-08-07 | 2014-08-12 |  |  |  |
| 76 | Streaming | 1d | 2014-08-07 | 2014-08-12 |  |  | David [50%] |
| 77 | Dateitypen / Player & Grundlagen | 0.4d | 2014-08-12 | 2014-08-12 | 76 |  | David [50%] |
| 97 | Logo-Entwurf | 1d | 2014-07-22 | 2014-07-24 | 95 |  | David [25%]; Felix [25%]; Lukas [25%]; Tobias [25%] |

Changed:

| ID | Task | Start | Finish | Duration | Complete | Total float | Predecessors | Other |
| --- | --- | --- | --- | --- | --- | --- | --- | --- |
| 6 | Featurematrix abgeschlossen |  |  |  |  |  |  | resources none → Tobias |
| 7 | **Mediatheken einbinden** |  |  | 19.68d → 20.18d | 38% → 35% |  |  |  |
| 9 | **"ZDF" Mediathek** |  |  |  | 37% → 44% |  |  |  |
| 10 | **Suchen in "ZDF"** |  |  |  | 60% → 69% |  |  |  |
| 11 | Exploration der Suchfunktionen von "ZDF" |  | 2014-06-23 A → 2014-06-19 A (-4d) | 1d → 0.5d |  |  |  |  |
| 12 | Entwicklung Queries |  | 2014-07-01 A → 2014-06-26 A (-5d) | 3d → 1.5d |  |  |  |  |
| 13 | Parsen der Ergebnisse | 2014-07-01 A → 2014-06-26 A (-5d) | 2014-07-08 → 2014-07-01 A (-7d) | 2d → 1.5d | 75% → 100% | 0.2d → none |  |  |
| 14 | Filterung der Suchergebnisse | 2014-07-08 → 2014-07-01 (-7d) | 2014-07-15 → 2014-07-08 (-7d) |  |  | 11.05d → 13d |  |  |
| 15 | Darstellung der Ergebnisse |  | 2014-07-15 → 2014-07-10 A (-5d) | 2d → 1d | 25% → 100% | 0d → none |  |  |
| 16 | Suchen in "ZDF" Mediathek abgeschlossen |  | 2014-07-15 A |  | 50% → 100% | 0d → none |  | resources none → David |
| 17 | **Browsing in "ZDF"** |  |  |  | 9% → 12% |  |  |  |
| 19 | Entwicklung Queries | 2014-08-05 → 2014-08-07 (+2d) |  | 3d → 2d |  |  |  |  |
| 21 | Browsing in "ZDF" Mediatheken abgeschlossen |  |  |  |  |  |  | resources none → David |
| 22 | **Streamen von "ZDF"** |  | 2014-08-05 → 2014-07-28 (-8d) | 6.25d → 3.55d | 25% → 42% | 0.3d → 0.93d |  |  |
| 23 | Streaming |  | 2014-07-31 → 2014-07-21 (-10d) | 6d → 2d | 25% → 50% | 0d → 1.5d |  |  |
| 24 | Dateitypen / Player & Grundlagen | 2014-07-31 A → 2014-07-24 A (-7d) | 2014-08-05 → 2014-07-28 (-8d) |  |  | 0.3d → 0.93d |  |  |
| 25 | Streaming in Seite einbinden | 2014-08-05 A → 2014-07-29 A (-7d) | 2014-08-07 → 2014-07-31 (-7d) |  |  | 3.67d → 2.08d |  |  |
| 26 | "ZDF" Mediathek eingebunden |  |  |  | 30% → 75% | 3.67d → 0d |  | resources Lukas → David |
| 27 | **"ARD" Mediathek** |  | 2014-08-14 → 2014-08-01 (-13d) | 16.32d → 12.5d | 32% → 61% | 0.62d → 5.5d |  |  |
| 28 | **Suchen in "ARD"** |  |  |  | 47% → 50% | 9.8d → 10.85d |  |  |
| 29 | Exploration der Suchfunktionen von "ARD" |  | 2014-06-26 A → 2014-06-24 A (-2d) | 1d → 0.5d |  |  |  |  |
| 31 | Parsen der Ergebnisse |  | 2014-07-08 → 2014-07-07 A (-1d) | 2d → 1d | 75% → 100% | 0.1d → none |  |  |
| 32 | Filterung der Suchergebnisse | 2014-07-08 → 2014-07-07 (-1d) | 2014-07-15 → 2014-07-10 (-5d) |  |  | 9.8d → 0d |  |  |
| 33 | Darstellung der Ergebnisse |  | 2014-07-15 → 2014-07-14 (-1d) | 2d → 1d | 25% → 50% | 1.8d → 1d | 31 → 32 |  |
| 34 | Suchen in "ARD" Mediathek abgeschlossen |  |  |  |  | 1.8d → 0.35d |  | resources none → Lukas |
| 35 | **Browsing in "ARD"** |  |  |  | 20% → 99% | 7.45d → 8.5d |  |  |
| 37 | Entwicklung Queries |  | 2014-07-17 → 2014-07-14 A (-3d) | 3d → 1.5d | 25% → 100% | 7.2d → none |  |  |
| 38 | Parsen der Ergebnisse | 2014-07-17 A | 2014-07-22 A | 2d → 1.5d | 0% → 100% | 7.2d → none |  |  |
| 39 | Browsing in "ARD" Mediathek abgeschlossen | 2014-07-22 A |  |  | 0% → 50% | 7.45d → 8.5d |  | resources none → Lukas |
| 40 | **Streamen von "ARD"** | 2014-07-22 A → 2014-07-17 A (-5d) | 2014-08-12 → 2014-07-24 (-19d) | 6.25d → 3d | 25% → 50% | 0.3d → 0.5d |  |  |
| 41 | Streaming | 2014-07-22 A → 2014-07-17 A (-5d) | 2014-08-07 → 2014-07-22 (-16d) | 6d → 2d | 25% → 75% | 0d → 1.05d |  | constraint start no earlier than 2014-07-22 → none |
| 42 | Dateitypen / Player & Grundlagen | 2014-08-07 A → 2014-07-22 (-16d) | 2014-08-12 → 2014-07-24 (-19d) |  | 25% → 0% | 0.3d → 0.5d |  |  |
| 43 | Streaming in Seite einbinden | 2014-08-12 A → 2014-07-29 A (-14d) | 2014-08-14 → 2014-07-31 (-14d) |  |  | 0.62d → 1.07d |  |  |
| 44 | "ARD" Mediathek eingebunden | 2014-08-14 A → 2014-08-01 A (-13d) | 2014-08-14 → 2014-08-01 (-13d) |  | 20% → 50% | 0.62d → 0.45d |  | resources none → Lukas |
| 78 | Kombination Suchalgorithmen |  |  | 2d → 1d |  |  | 27 → 27, 45, 9, 62 |  |
| 83 | **Interface** |  |  | 23.5d → 24d |  |  |  |  |
| 85 | UI Entwürfe abgschlossen |  |  |  |  |  |  | resources none → Felix |
| 96 | Screendesign abgeschlossen |  |  |  |  | 9d → 9.5d |  | resources none → Felix |
| 98 | **Technische Umsetzung** |  |  | 14.12d → 14.62d |  |  |  |  |
| 99 | **Startseite** |  | 2014-07-24 → 2014-07-28 (+4d) |  |  |  |  |  |
| 104 | Grundgerüst der Startseite abgeschlossen | 2014-07-24 → 2014-07-28 (+4d) | 2014-07-24 → 2014-07-28 (+4d) |  |  |  |  | resources none → Felix; Lukas; David; Tobias |
| 107 | **Persönlicher Bereich** |  |  | 10.75d → 11.25d |  |  |  |  |
| 112 | Grundgerüst des persönlichen Bereichs abgeschlossen |  |  |  |  |  |  | resources none → Felix; Lukas; David; Tobias |
| 113 | **Design-Umsetzung** | 2014-07-24 → 2014-07-28 (+4d) | 2014-08-12 → 2014-08-14 (+2d) | 4.7d → 5.33d |  |  |  |  |
| 114 | Umsetzung Startseite | 2014-07-24 → 2014-07-28 (+4d) | 2014-08-04 → 2014-08-05 (+1d) |  |  |  |  |  |
| 115 | Umsetzung Sendung-Detailseite | 2014-08-04 → 2014-08-05 (+1d) | 2014-08-07 → 2014-08-11 (+4d) |  |  |  |  |  |
| 116 | Umsetzung Persönlicher Bereich | 2014-08-07 → 2014-08-11 (+4d) | 2014-08-12 → 2014-08-14 (+2d) |  |  |  |  |  |
| 117 | Anpassungen (Design) | 2014-08-12 → 2014-08-14 (+2d) |  |  |  |  |  |  |
| 119 | Interface abgeschlossen |  |  |  |  |  |  | resources none → Felix |
| 123 | Projektabschluss |  |  |  |  |  |  | resources none → Lukas; David; Felix; Tobias |

## Version 15 (data date 2014-07-17, saved 2014-07-17, file Projektplan_09.mpp)

Note of the change: project plan update

Last finish stays 2014-09-01. Complete tasks 27 → 31.

Changed:

| ID | Task | Start | Finish | Duration | Complete | Total float |
| --- | --- | --- | --- | --- | --- | --- |
| 7 | **Mediatheken einbinden** |  |  |  | 35% → 40% |  |
| 27 | **"ARD" Mediathek** |  |  |  | 61% → 63% |  |
| 28 | **Suchen in "ARD"** |  |  |  | 50% → 54% | 10.85d → 0.35d |
| 30 | Entwicklung Queries |  | 2014-07-03 A |  | 75% → 100% | 14.22d → none |
| 45 | **"BR" Mediathek** | 2014-08-04 A |  |  | 0% → 16% | 0.45d → 0.75d |
| 46 | **Suchen in "BR"** | 2014-08-04 A |  |  | 0% → 31% | 0.45d → 0.75d |
| 47 | Exploration der Suchfunktionen von "BR" | 2014-08-04 A | 2014-08-04 A | 0.5d → 0.3d | 0% → 100% | 0.45d → none |
| 48 | Entwicklung Queries | 2014-08-05 A | 2014-08-07 → 2014-08-05 A (-2d) | 1d → 0.4d | 0% → 100% | 0.62d → none |
| 49 | Parsen der Ergebnisse | 2014-08-07 A | 2014-08-11 → 2014-08-07 A (-4d) | 1d → 0.3d | 0% → 100% | 0.62d → none |
| 50 | Filterung der Suchergebnisse | 2014-08-11 → 2014-08-07 (-4d) |  |  |  | 0.45d → 0.57d |
| 51 | Darstellung der Ergebnisse | 2014-08-18 A |  |  | 0% → 25% | 0.45d → 0.75d |
| 52 | Suchen in "BR" Mediathek abgeschlossen | 2014-08-19 A |  |  | 0% → 10% |  |
| 53 | **Browsing in "BR"** | 2014-08-04 A |  |  | 0% → 19% | 3.33d → 3.5d |
| 54 | Exploration der IA's der Mediathek | 2014-08-04 A |  |  | 0% → 75% | 3.33d → 0.35d |
| 55 | Entwicklung Queries | 2014-08-05 A |  |  | 0% → 10% |  |

## Version 16 (data date 2014-07-21, saved 2014-07-21, file Projektplan_09.mpp)

Note of the change: Merge branch 'streaming' of github.com:UniRegensburg/ps-mediathekcrawler into streaming

Last finish 2014-09-01 → 2014-09-08 (+7d). Complete tasks 31 → 30.

Added:

| ID | Task | Duration | Start | Finish | Predecessors | Resources |
| --- | --- | --- | --- | --- | --- | --- |
| 47 | Neue Sendungen in "BR" | 0.1d | 2014-08-07 A | 2014-08-07 A | 46 | Lukas [50%] |
| 49 | Filtern in "BR" | 2d | 2014-08-05 | 2014-08-11 | 48 | Lukas [50%] |
| 52 | **"WDR" Mediathek** | 6.88d | 2014-08-14 A | 2014-09-03 | 51 |  |
| 53 | Suchen in "WDR" | 1.5d | 2014-08-14 A | 2014-08-19 |  | Lukas [50%] |
| 54 | Neue Sendungen in "WDR" | 1.5d | 2014-08-19 | 2014-08-21 | 53 | Lukas [50%] |
| 55 | Rubriken in "WDR" | 1.5d | 2014-08-21 | 2014-08-28 | 54 | Lukas [50%] |
| 56 | Filtern in "WDR" | 2d | 2014-08-28 | 2014-09-02 | 55 | Lukas [50%] |
| 57 | Streamen von "WDR" | 1d | 2014-09-02 | 2014-09-03 | 56 | Lukas [50%] |
| 58 | "WDR" Mediathek eingebunden | 0d | 2014-09-03 | 2014-09-03 | 57 | Lukas |
| 61 | Neue Sendungen in "Arte" | 1.5d | 2014-08-12 | 2014-08-18 | 60 | David [50%] |
| 63 | Filtern in "Arte" | 2d | 2014-08-21 | 2014-08-28 | 62 | David [50%] |
| 65 | "Arte" Mediathek eingebunden | 0d | 2014-09-01 | 2014-09-01 | 64 | David |

Removed: 47 Exploration der Suchfunktionen von "BR"; 48 Entwicklung Queries; 49 Parsen der Ergebnisse; 50 Filterung der Suchergebnisse; 51 Darstellung der Ergebnisse; 52 Suchen in "BR" Mediathek abgeschlossen; 54 Exploration der IA's der Mediathek; 55 Entwicklung Queries; 56 Parsen der Ergebnisse; 57 Browsing in "BR" Mediathek abgeschlossen; 59 Streaming; 60 Dateitypen / Player & Grundlagen; 64 Exploration der Suchfunktionen von "Arte"; 65 Entwicklung Queries; 66 Parsen der Ergebnisse; 67 Filterung der Suchergebnisse; 68 Darstellung der Ergebnisse; 69 Suchen in "Arte" Mediathek abgeschlossen; 71 Exploration der IA's der Mediathek; 72 Entwicklung Queries; 73 Parsen der Ergebnisse; 74 Browsing in "Arte" Mediathek abgeschlossen; 76 Streaming; 77 Dateitypen / Player & Grundlagen

Changed:

| ID | Task | Start | Finish | Duration | Complete | Total float | Predecessors | Other |
| --- | --- | --- | --- | --- | --- | --- | --- | --- |
| 7 | **Mediatheken einbinden** |  | 2014-08-21 → 2014-09-03 (+13d) | 20.18d → 24.36d | 40% → 41% | 0d → 0.57d |  |  |
| 9 | **"ZDF" Mediathek** |  |  |  | 44% → 51% | 0d → 2.95d |  |  |
| 17 | **Browsing in "ZDF"** |  |  |  | 12% → 22% | 0d → 2.95d |  |  |
| 19 | Entwicklung Queries | 2014-08-07 → 2014-08-12 (+5d) |  | 2d → 1d |  |  |  |  |
| 20 | Parsen der Ergebnisse |  | 2014-08-21 → 2014-08-19 (-2d) | 2d → 1d | 10% → 20% | 0d → 4d |  |  |
| 45 | **"BR" Mediathek** |  | 2014-08-19 → 2014-08-14 (-5d) | 4.75d → 3.31d | 16% → 45% | 0.75d → 0d |  |  |
| 46 | Suchen in "BR" |  | 2014-08-19 → 2014-08-07 A (-12d) | 4.75d → 1.5d | 31% → 100% | 0.75d → none |  | resources none → Lukas [50%] |
| 48 | Rubriken in "BR" |  | 2014-08-11 → 2014-08-05 A (-6d) | 2d → 0.1d | 19% → 100% | 3.5d → none | none → 47 | was named Browsing in "BR"; resources none → Lukas [50%] |
| 50 | Streamen von "BR" | 2014-08-04 → 2014-08-11 A (+7d) |  | 2.5d → 1d | 0% → 50% | 1.95d → 0d | none → 49 | resources none → Lukas [50%] |
| 51 | "BR" Mediathek eingebunden | 2014-08-12 A |  | 1d → 0.18d |  | 1.95d → 0d |  | was named Streaming in Seite einbinden |
| 59 | **"Arte" Mediathek** | 2014-08-07 A → 2014-08-07 | 2014-08-19 → 2014-09-01 (+13d) | 2.58d → 6.62d | 3% → 0% | 1.1d → 0d |  |  |
| 60 | Suchen in "Arte" |  | 2014-08-19 → 2014-08-12 (-7d) | 2.58d → 1.5d |  | 0.68d → 0d |  | resources none → David [50%] |
| 62 | Rubriken in "Arte" | 2014-08-07 A → 2014-08-18 (+11d) | 2014-08-14 → 2014-08-21 (+7d) | 1.55d → 1.5d | 11% → 0% | 2.12d → 0d | none → 61 | was named Browsing in "Arte"; resources none → David [50%] |
| 64 | Streamen von "Arte" | 2014-08-07 → 2014-08-28 (+21d) | 2014-08-12 → 2014-09-01 (+20d) | 1.02d → 1d |  | 2.17d → 0d | none → 63 | resources none → David [50%] |
| 66 | Kombination Suchalgorithmen |  | 2014-08-21 → 2014-09-01 (+11d) |  |  | 0d → 1.8d |  |  |
| 71 | **Interface** |  | 2014-08-21 → 2014-09-03 (+13d) | 24d → 28.75d |  |  |  |  |
| 86 | **Technische Umsetzung** |  | 2014-08-21 → 2014-09-03 (+13d) | 14.62d → 19.38d |  |  |  |  |
| 87 | **Startseite** |  | 2014-07-28 → 2014-08-11 (+14d) | 6.62d → 10.62d |  |  |  |  |
| 92 | Grundgerüst der Startseite abgeschlossen | 2014-07-28 → 2014-08-11 (+14d) | 2014-07-28 → 2014-08-11 (+14d) |  |  |  |  |  |
| 95 | **Persönlicher Bereich** |  | 2014-08-21 → 2014-09-03 (+13d) | 11.25d → 16d |  |  |  |  |
| 100 | Grundgerüst des persönlichen Bereichs abgeschlossen | 2014-08-21 → 2014-09-03 (+13d) | 2014-08-21 → 2014-09-03 (+13d) |  |  |  |  |  |
| 101 | **Design-Umsetzung** | 2014-07-28 → 2014-08-11 (+14d) | 2014-08-14 → 2014-08-26 (+12d) | 5.33d → 4.75d |  |  |  |  |
| 102 | Umsetzung Startseite | 2014-07-28 → 2014-08-11 (+14d) | 2014-08-05 → 2014-08-18 (+13d) |  |  |  |  |  |
| 103 | Umsetzung Sendung-Detailseite | 2014-08-05 → 2014-08-18 (+13d) | 2014-08-11 → 2014-08-21 (+10d) |  |  |  |  |  |
| 104 | Umsetzung Persönlicher Bereich | 2014-08-11 → 2014-08-25 (+14d) | 2014-08-14 → 2014-08-26 (+12d) |  |  |  |  |  |
| 105 | Anpassungen (Design) | 2014-08-14 → 2014-08-26 (+12d) | 2014-08-19 → 2014-09-01 (+13d) |  |  |  |  |  |
| 106 | Browserspezifische Anpassungen | 2014-08-19 → 2014-09-01 (+13d) | 2014-08-21 → 2014-09-02 (+12d) |  |  |  |  |  |
| 107 | Interface abgeschlossen | 2014-08-21 → 2014-09-02 (+12d) | 2014-08-21 → 2014-09-02 (+12d) |  |  | 0d → 0.75d |  |  |
| 108 | **Testing** | 2014-08-21 → 2014-09-03 (+13d) | 2014-09-01 → 2014-09-08 (+7d) | 2.7d → 3d |  |  |  |  |
| 109 | Softwaretests | 2014-08-21 → 2014-09-03 (+13d) | 2014-08-28 → 2014-09-05 (+8d) |  |  |  |  |  |
| 110 | Usability-Test | 2014-08-28 → 2014-09-05 (+8d) | 2014-09-01 → 2014-09-08 (+7d) |  |  |  |  |  |
| 111 | Projektabschluss | 2014-09-01 → 2014-09-08 (+7d) | 2014-09-01 → 2014-09-08 (+7d) |  |  |  |  |  |

## Version 17 (data date 2014-08-12, saved 2014-08-12, file Projektplan_10.mpp)

Note of the change: changed search-mobile url. design changes. possible video-js-fix?

Last finish stays 2014-09-08. Complete tasks 30 → 62.

Changed:

| ID | Task | Start | Finish | Duration | Complete | Total float | Predecessors | Other |
| --- | --- | --- | --- | --- | --- | --- | --- | --- |
| 7 | **Mediatheken einbinden** |  |  |  | 41% → 70% |  |  |  |
| 9 | **"ZDF" Mediathek** |  |  |  | 51% → 79% |  |  |  |
| 17 | **Browsing in "ZDF"** |  | 2014-08-21 A |  | 22% → 100% | 2.95d → none |  |  |
| 19 | Entwicklung Queries | 2014-08-12 A | 2014-08-14 A |  | 0% → 100% | 0d → none |  |  |
| 20 | Parsen der Ergebnisse |  | 2014-08-19 A |  | 20% → 100% | 4d → none |  |  |
| 21 | Browsing in "ZDF" Mediatheken abgeschlossen |  | 2014-08-21 A |  | 10% → 100% | 2.95d → none |  |  |
| 22 | **Streamen von "ZDF"** |  |  |  | 42% → 75% | 0.93d → 10.45d |  |  |
| 23 | Streaming |  | 2014-07-21 A |  | 50% → 100% | 1.5d → none |  |  |
| 25 | Streaming in Seite einbinden |  | 2014-07-31 A |  | 30% → 100% | 2.08d → none |  |  |
| 26 | "ZDF" Mediathek eingebunden |  | 2014-08-07 A |  | 75% → 100% | 0d → none |  |  |
| 27 | **"Das Erste" Mediathek** |  |  |  | 63% → 76% |  |  | was named "ARD" Mediathek |
| 28 | **Suchen in "Das Erste"** |  |  |  | 54% → 63% | 0.35d → 13.8d |  | was named Suchen in "ARD" |
| 32 | Filterung der Suchergebnisse |  |  |  |  | 0d → 14.45d |  | resources Lukas [50%] → Lukas [50%]; David |
| 33 | Darstellung der Ergebnisse |  | 2014-07-14 A |  | 50% → 100% | 1d → none |  |  |
| 34 | Suchen in "ARD" Mediathek abgeschlossen |  | 2014-07-15 A |  | 35% → 100% | 0.35d → none |  |  |
| 35 | **Browsing in "Das Erste"** |  | 2014-07-22 A |  | 99% → 100% | 11.45d → none |  | was named Browsing in "ARD" |
| 39 | Browsing in "ARD" Mediathek abgeschlossen |  | 2014-07-22 A |  | 50% → 100% | 11.45d → none |  |  |
| 40 | **Streamen von "Das Erste"** |  |  |  | 50% → 67% | 0.5d → 10.45d |  | was named Streamen von "ARD" |
| 41 | Streaming |  | 2014-07-22 A |  | 75% → 100% | 1.05d → none |  |  |
| 43 | Streaming in Seite einbinden |  | 2014-07-31 A |  | 30% → 100% | 0.62d → none |  |  |
| 44 | "ARD" Mediathek eingebunden |  | 2014-08-01 A |  | 50% → 100% | 0d → none |  |  |
| 46 | Suchen in "BR" |  |  |  |  |  |  | resources Lukas [50%] → David |
| 47 | Neue Sendungen in "BR" |  |  |  |  |  |  | resources Lukas [50%] → David |
| 48 | Rubriken in "BR" |  |  |  |  |  |  | resources Lukas [50%] → David |
| 49 | Filtern in "BR" |  |  |  |  |  |  | resources Lukas [50%] → David |
| 50 | Streamen von "BR" |  |  |  |  |  |  | resources Lukas [50%] → David |
| 51 | "BR" Mediathek eingebunden | 2014-08-12 A → 2014-08-12 |  |  |  |  |  | resources Lukas → David |
| 52 | **"SRF" Mediathek** |  | 2014-09-03 → 2014-09-02 (-1d) |  | 10% → 53% | 0.57d → none |  | was named "WDR" Mediathek |
| 53 | Suchen in "SRF" |  | 2014-08-19 A |  | 50% → 100% | 0.57d → none |  | was named Suchen in "WDR"; resources Lukas [50%] → David |
| 54 | Neue Sendungen in "SRF" | 2014-08-19 A | 2014-08-21 A |  | 0% → 100% | 0d → none |  | was named Neue Sendungen in "WDR"; resources Lukas [50%] → David |
| 55 | Rubriken in "SRF" |  |  |  |  | 0.25d → 0.38d |  | was named Rubriken in "WDR"; resources Lukas [50%] → David |
| 56 | Filtern in "SRF" |  |  |  |  | 0.57d → 0.69d |  | was named Filtern in "WDR"; resources Lukas [50%] → David |
| 57 | Streamen von "SRF" | 2014-09-02 A | 2014-09-03 A |  | 0% → 100% | 0.57d → none |  | was named Streamen von "WDR"; resources Lukas [50%] → David |
| 58 | "SRF" Mediathek eingebunden | 2014-09-03 A |  |  | 0% → 50% | 0.57d → -0.3d |  | was named "WDR" Mediathek eingebunden; resources Lukas → David |
| 59 | **"Arte" Mediathek** | 2014-08-07 A |  |  | 0% → 73% |  |  |  |
| 60 | Suchen in "Arte" | 2014-08-07 A | 2014-08-12 A |  | 0% → 100% | 0d → none |  |  |
| 61 | Neue Sendungen in "Arte" | 2014-08-12 A | 2014-08-18 A |  | 0% → 100% | 0d → none |  |  |
| 62 | Rubriken in "Arte" | 2014-08-18 A | 2014-08-21 A |  | 0% → 100% | 0d → none |  |  |
| 64 | Streamen von "Arte" | 2014-08-28 A | 2014-09-01 A |  | 0% → 100% | 0d → none |  |  |
| 65 | "Arte" Mediathek eingebunden | 2014-09-01 A | 2014-09-01 A |  | 0% → 100% | 0d → none |  |  |
| 71 | **Interface** |  |  |  | 28% → 74% |  |  |  |
| 79 | **Screendesign** |  | 2014-07-22 A |  | 47% → 100% | 14.25d → none |  |  |
| 80 | Screendesign Startseite |  | 2014-07-03 A |  | 60% → 100% | 0.62d → none |  |  |
| 81 | Screendesign Suche |  | 2014-07-08 A |  | 60% → 100% | 1d → none |  |  |
| 82 | Screendesign Persönlicher Bereich | 2014-07-08 A | 2014-07-15 A |  | 0% → 100% | 1d → none |  |  |
| 83 | Screendesign Sendungsbereich |  | 2014-07-22 A |  | 60% → 100% | 11.38d → none |  |  |
| 84 | Screendesign abgeschlossen |  | 2014-07-22 A |  | 50% → 100% | 14.25d → none |  |  |
| 85 | Logo-Entwurf | 2014-07-22 → 2014-08-12 (+21d) | 2014-07-24 → 2014-08-13 (+20d) | 1d → 0.88d |  | 12.25d → 6.62d |  | constraint none → finish no earlier than 2014-08-13; resources David [25%]; Felix [25%]; Lukas [25%]; Tobias [25%] → David [25%]; Felix [25%]; Tobias [25%] |
| 86 | **Technische Umsetzung** | 2014-07-03 A |  |  | 0% → 59% |  |  |  |
| 87 | **Startseite** | 2014-07-03 A |  |  | 0% → 64% | 0d → 8.75d |  |  |
| 88 | Beliebte Sendungen | 2014-07-03 A | 2014-07-07 A |  | 0% → 100% | 4.5d → none |  |  |
| 89 | Neue Sendungen | 2014-07-07 A | 2014-07-10 A |  | 0% → 100% | 4d → none |  |  |
| 90 | Kategorisierung | 2014-07-14 A |  |  | 0% → 50% | 4.12d → 0.12d |  |  |
| 91 | Filterung | 2014-07-17 A |  |  | 0% → 25% | 4.12d → 13.25d |  |  |
| 92 | Grundgerüst der Startseite abgeschlossen | 2014-08-11 A | 2014-08-11 A |  | 0% → 100% | 0d → none |  |  |
| 93 | Suche | 2014-07-08 A |  |  | 0% → 50% | 14.88d → 15.25d |  |  |
| 94 | Sendung-Detailsseite | 2014-07-22 A | 2014-07-28 A |  | 0% → 100% | 11.38d → none |  |  |
| 95 | **Persönlicher Bereich** | 2014-07-15 A |  |  | 0% → 50% |  |  |  |
| 96 | Dashboard (Übersicht) | 2014-07-15 A | 2014-07-17 A |  | 0% → 100% | 9.12d → none |  |  |
| 97 | Reminder & Abos | 2014-07-17 → 2014-08-11 (+25d) | 2014-07-24 → 2014-08-21 (+28d) | 2d → 4d |  | 9.12d → 4d | 96 → none | constraint none → start no earlier than 2014-08-11; resources Felix [50%] → Tobias [50%] |
| 98 | Playlisten | 2014-07-24 A | 2014-07-31 A |  | 0% → 100% | 9.12d → none |  | resources Tobias [50%] → Felix [50%] |
| 99 | Merkliste | 2014-07-31 A | 2014-08-04 A |  | 0% → 100% | 9.38d → none |  | resources Tobias [50%] → Felix [50%] |
| 100 | Grundgerüst des persönlichen Bereichs abgeschlossen | 2014-09-03 A |  |  | 0% → 75% |  |  |  |
| 101 | **Design-Umsetzung** | 2014-08-11 A |  |  | 0% → 80% | 0d → 0.62d |  |  |
| 102 | Umsetzung Startseite | 2014-08-11 A | 2014-08-18 → 2014-08-14 (-4d) | 2.5d → 2.19d | 0% → 86% | 0d → 1.5d |  | resources Felix [50%] → Felix |
| 103 | Umsetzung Sendung-Detailseite | 2014-08-18 A |  |  | 0% → 75% | 0d → 0.5d |  |  |
| 104 | Umsetzung Persönlicher Bereich | 2014-08-25 A |  |  | 0% → 75% | 0d → 0.62d |  | resources Tobias [50%] → Felix |
| 105 | Anpassungen (Design) | 2014-08-26 A |  |  | 0% → 25% |  |  |  |

## Version 18 (data date 2014-08-12, saved 2014-08-18, file Projektplan_10.mpp)

Note of the change: project plan update

Last finish stays 2014-09-08. Complete tasks 62 → 63.

Added:

| ID | Task | Duration | Start | Finish | Predecessors | Constraint | Resources |
| --- | --- | --- | --- | --- | --- | --- | --- |
| 66 | Video JS einbinden | 0.8d | 2014-08-18 | 2014-08-19 |  | start no earlier than 2014-08-18 | Lukas [50%] |
| 67 | RTMP mit VideoJS testen | 0.4d | 2014-08-19 | 2014-08-19 | 66 | start no earlier than 2014-08-18 | Lukas [50%] |
| 109 | **Serverumzug** | 2.02d | 2014-08-18 | 2014-08-21 |  |  |  |
| 110 | Aktuellen Stand auf Remote Server hochladen (FTP) | 0.2d | 2014-08-18 | 2014-08-18 |  | start no earlier than 2014-08-18 | Lukas [50%] |
| 111 | Datenbank auf Remote einspielen | 0.2d | 2014-08-18 | 2014-08-18 | 110 |  | Lukas [50%] |
| 112 | Testing auf Remote Server | 1d | 2014-08-18 | 2014-08-21 | 111 |  | Lukas [50%] |

Removed: 97 Reminder & Abos

Changed:

| ID | Task | Start | Finish | Duration | Complete | Total float | Predecessors | Other |
| --- | --- | --- | --- | --- | --- | --- | --- | --- |
| 7 | **Mediatheken einbinden** |  |  | 24.36d → 25.36d | 70% → 72% |  |  |  |
| 9 | **"ZDF" Mediathek** |  |  | 18d → 19d |  |  |  |  |
| 17 | **Browsing in "ZDF"** |  |  | 18d → 19d |  |  |  |  |
| 27 | **"Das Erste" Mediathek** |  |  |  | 76% → 92% | 8.45d → 9.45d |  |  |
| 28 | **Suchen in "Das Erste"** |  | 2014-07-15 A |  | 63% → 100% | 13.8d → none |  |  |
| 32 | Filterung der Suchergebnisse | 2014-07-07 A | 2014-07-10 A |  | 0% → 100% | 14.45d → none |  |  |
| 45 | **"BR" Mediathek** |  |  | 3.31d → 3.81d | 45% → 46% | 0d → -0.3d |  |  |
| 46 | Suchen in "BR" |  |  |  |  |  |  | resources David → David [50%]; Lukas [50%] |
| 48 | Rubriken in "BR" |  |  |  |  |  |  | resources David → David [50%]; Lukas [50%] |
| 50 | Streamen von "BR" |  | 2014-08-12 → 2014-08-14 (+2d) | 1d → 1.5d |  | 0d → -0.5d |  | resources David → David [50%]; Lukas [50%] |
| 51 | "BR" Mediathek eingebunden | 2014-08-12 → 2014-08-14 (+2d) |  |  |  | 0d → -0.62d |  |  |
| 52 | **"SRF" Mediathek** |  |  | 6.88d → 7.88d |  |  |  |  |
| 59 | **"Arte" Mediathek** |  |  | 6.62d → 7.62d |  |  |  |  |
| 73 | **Interface** |  |  | 28.75d → 29.75d | 74% → 81% |  |  |  |
| 88 | **Technische Umsetzung** |  |  | 19.38d → 20.38d | 59% → 70% |  |  |  |
| 97 | **Persönlicher Bereich** |  |  | 16d → 17d | 50% → 99% |  |  |  |
| 99 | Playlisten |  |  |  |  |  | Reminder & Abos → none |  |
| 102 | **Design-Umsetzung** |  |  | 4.75d → 5.75d |  |  |  |  |

## Version 19 (data date 2014-08-12, saved 2014-08-27, file Projektplan_11.mpp)

Note of the change: Merge branch 'streaming' of github.com:UniRegensburg/ps-mediathekcrawler into streaming

Last finish 2014-09-08 → 2014-09-09 (+1d). Complete tasks 63 → 100.

Added:

| ID | Task | Duration | Start | Finish | Predecessors | Resources |
| --- | --- | --- | --- | --- | --- | --- |
| 66 | **"ORF" Mediathek** | 1d | 2014-09-01 A | 2014-09-02 A | 65 |  |
| 67 | Suchen in "ORF" | 0.2d | 2014-09-01 A | 2014-09-01 A |  | David [25%] |
| 68 | Neue Sendungen in "ORF" | 0.2d | 2014-09-01 A | 2014-09-01 A | 67 | David [25%] |
| 69 | Rubriken in "ORF" | 0.2d | 2014-09-01 A | 2014-09-02 A | 68 | David [25%] |
| 70 | Filtern in "ORF" | 0.2d | 2014-09-02 A | 2014-09-02 A | 69 | David [25%] |
| 71 | Streamen von "ORF" | 0.2d | 2014-09-02 A | 2014-09-02 A | 70 | David [25%] |
| 72 | "ORF" Mediathek eingebunden | 0d | 2014-09-02 A | 2014-09-02 A | 71 | David |
| 97 | Slider mit aktuellen Videos der Mediatheken | 0.4d | 2014-07-03 A | 2014-07-03 A |  | Lukas |
| 119 | Test Links | 0.2d | 2014-09-03 A | 2014-09-04 A |  | David [10%]; Felix [10%]; Lukas [10%]; Tobias [10%] |
| 120 | Test Video abspielen | 0.2d | 2014-09-03 A | 2014-09-04 A |  | David [10%]; Felix [10%]; Lukas [10%]; Tobias [10%] |
| 121 | Funktionstest persönlicher Bereich | 0.2d | 2014-09-03 A | 2014-09-04 A |  | David [10%]; Felix [10%]; Lukas [10%]; Tobias [10%] |
| 122 | Test Suche | 0.2d | 2014-09-03 A | 2014-09-04 A |  | David [10%]; Felix [10%]; Lukas [10%]; Tobias [10%] |
| 123 | Korrekturen | 0.5d | 2014-09-04 A | 2014-09-04 A | 119, 120, 121, 122 | David [10%]; Felix [10%]; Lukas [10%] |
| 124 | Softwaretests abgeschlossen | 0d | 2014-09-04 A | 2014-09-04 A | 123 | David; Felix; Lukas; Tobias |
| 126 | Konzeption Usability Test | 0.1d | 2014-09-04 A | 2014-09-04 A |  | David [30%] |
| 127 | Durchführung der Testsitzungen | 1d | 2014-09-04 A | 2014-09-05 A | 126 | David [20%]; Felix [20%]; Lukas [20%]; Tobias [20%] |
| 128 | Korrekturen | 2d | 2014-09-05 A | 2014-09-09 | 127 | David [20%]; Lukas [20%] |

Removed: 90 Beliebte Sendungen; 91 Neue Sendungen; 92 Kategorisierung; 93 Filterung

Changed:

| ID | Task | Start | Finish | Duration | Complete | Total float | Predecessors | Other |
| --- | --- | --- | --- | --- | --- | --- | --- | --- |
| 7 | **Mediatheken einbinden** |  | 2014-09-03 A |  | 72% → 100% | 0.57d → none |  |  |
| 9 | **"ZDF" Mediathek** |  | 2014-08-21 A |  | 79% → 100% | 2.95d → none |  |  |
| 10 | **Suchen in "ZDF"** |  | 2014-07-15 A |  | 69% → 100% | 15d → none |  |  |
| 14 | Filterung der Suchergebnisse | 2014-07-01 A | 2014-07-08 A |  | 0% → 100% | 13d → none |  |  |
| 22 | **Streamen von "ZDF"** |  | 2014-07-28 A |  | 75% → 100% | 11.45d → none |  |  |
| 24 | Dateitypen / Player & Grundlagen |  | 2014-07-28 A |  | 25% → 100% | 11.45d → none |  |  |
| 27 | **"Das Erste" Mediathek** |  | 2014-08-01 A |  | 92% → 100% | 9.45d → none |  |  |
| 40 | **Streamen von "Das Erste"** |  | 2014-07-24 A |  | 67% → 100% | 11.45d → none |  |  |
| 42 | Dateitypen / Player & Grundlagen | 2014-07-22 A | 2014-07-24 A |  | 0% → 100% | 10.45d → none |  |  |
| 45 | **"BR" Mediathek** |  | 2014-08-14 → 2014-08-12 A (-2d) | 3.81d → 2.68d | 46% → 100% | -0.3d → none |  |  |
| 49 | Filtern in "BR" | 2014-08-05 A | 2014-08-11 → 2014-08-05 A (-6d) | 2d → 0.3d | 0% → 100% | 0.75d → none |  |  |
| 50 | Streamen von "BR" |  | 2014-08-14 → 2014-08-12 A (-2d) | 1.5d → 0.5d | 50% → 100% | -0.5d → none |  |  |
| 51 | "BR" Mediathek eingebunden | 2014-08-14 → 2014-08-12 A (-2d) | 2014-08-14 → 2014-08-12 A (-2d) |  | 0% → 100% | -0.62d → none |  |  |
| 52 | **"SRF" Mediathek** |  | 2014-09-02 → 2014-09-03 A (+1d) |  | 53% → 100% |  |  |  |
| 53 | Suchen in "SRF" |  | 2014-08-19 A → 2014-08-14 A (-5d) | 1.5d → 0.2d |  |  |  |  |
| 54 | Neue Sendungen in "SRF" |  | 2014-08-21 A → 2014-08-19 A (-2d) | 1.5d → 0.2d |  |  |  |  |
| 55 | Rubriken in "SRF" | 2014-08-21 → 2014-08-19 A (-2d) | 2014-08-28 → 2014-08-19 A (-9d) | 1.5d → 0.2d | 0% → 100% | 0.38d → none |  |  |
| 56 | Filtern in "SRF" | 2014-08-28 → 2014-08-19 A (-9d) | 2014-09-02 → 2014-08-21 A (-12d) | 2d → 0.5d | 0% → 100% | 0.69d → none |  |  |
| 57 | Streamen von "SRF" |  | 2014-09-03 A → 2014-09-02 A (-1d) | 1d → 0.3d |  |  |  |  |
| 58 | "SRF" Mediathek eingebunden |  | 2014-09-03 A |  | 50% → 100% | -0.3d → none |  |  |
| 59 | **"Arte" Mediathek** |  | 2014-09-01 A |  | 73% → 100% | 0d → none |  |  |
| 60 | Suchen in "Arte" |  | 2014-08-12 A → 2014-08-07 A (-5d) | 1.5d → 0.2d |  |  |  |  |
| 61 | Neue Sendungen in "Arte" |  | 2014-08-18 A → 2014-08-14 A (-4d) | 1.5d → 0.3d |  |  |  |  |
| 62 | Rubriken in "Arte" |  | 2014-08-21 A → 2014-08-19 A (-2d) | 1.5d → 0.4d |  |  |  |  |
| 63 | Filtern in "Arte" | 2014-08-21 → 2014-08-19 A (-2d) | 2014-08-28 → 2014-08-19 A (-9d) | 2d → 0.4d | 0% → 100% | 0.62d → none |  |  |
| 64 | Streamen von "Arte" |  | 2014-09-01 A → 2014-08-28 A (-4d) | 1d → 0.2d |  |  |  |  |
| 73 | Video JS einbinden | 2014-08-18 A | 2014-08-19 A |  | 0% → 100% | 5.85d → none |  |  |
| 74 | RTMP mit VideoJS testen | 2014-08-19 A | 2014-08-19 A |  | 0% → 100% | 5.8d → none |  |  |
| 75 | Kombination Suchalgorithmen |  | 2014-09-01 A |  | 50% → 100% | 1.8d → none |  |  |
| 80 | **Interface** |  |  |  | 81% → 97% |  |  |  |
| 95 | **Technische Umsetzung** |  | 2014-09-03 A |  | 70% → 100% | 0d → none |  |  |
| 96 | **Startseite** |  | 2014-08-11 A |  | 64% → 100% | 9.75d → none |  |  |
| 98 | Grundgerüst der Startseite abgeschlossen |  |  |  |  |  | Filterung → none |  |
| 99 | Suche |  | 2014-07-15 A |  | 50% → 100% | 16.25d → none |  |  |
| 101 | **Persönlicher Bereich** |  | 2014-09-03 A |  | 99% → 100% | 0d → none |  |  |
| 103 | Playlisten |  |  |  |  |  |  | resources Felix [50%] → Felix [50%]; Lukas [15%] |
| 104 | Merkliste |  |  |  |  |  |  | resources Felix [50%] → Felix [50%]; Lukas [15%] |
| 105 | Grundgerüst des persönlichen Bereichs abgeschlossen |  | 2014-09-03 A |  | 75% → 100% | 0d → none |  |  |
| 106 | **Design-Umsetzung** |  | 2014-08-26 A |  | 80% → 100% | 0.62d → none |  |  |
| 107 | Umsetzung Startseite |  | 2014-08-14 A |  | 86% → 100% | 2.5d → none |  | resources Felix → Felix; Lukas [25%] |
| 108 | Umsetzung Sendung-Detailseite |  | 2014-08-21 → 2014-08-19 A (-2d) | 2d → 1d | 75% → 100% | 0.5d → none |  |  |
| 109 | Umsetzung Persönlicher Bereich |  | 2014-08-26 A |  | 75% → 100% | 0.62d → none |  | resources Felix → Felix; Lukas [25%] |
| 110 | Anpassungen (Design) |  | 2014-09-01 A |  | 25% → 100% | 0d → none |  |  |
| 111 | Browserspezifische Anpassungen | 2014-09-01 A | 2014-09-02 A |  | 0% → 100% | 0d → none |  |  |
| 112 | Interface abgeschlossen | 2014-09-02 A | 2014-09-02 A |  | 0% → 100% | 0.75d → none |  |  |
| 113 | **Serverumzug** | 2014-08-18 A | 2014-08-21 A |  | 0% → 100% | 8.47d → none |  |  |
| 114 | Aktuellen Stand auf Remote Server hochladen (FTP) | 2014-08-18 A | 2014-08-18 A |  | 0% → 100% | 9.1d → none |  |  |
| 115 | Datenbank auf Remote einspielen | 2014-08-18 A | 2014-08-18 A |  | 0% → 100% | 8.75d → none |  |  |
| 116 | Testing auf Remote Server | 2014-08-18 A | 2014-08-21 A |  | 0% → 100% | 8.47d → none |  |  |
| 117 | **Testing** | 2014-09-03 A | 2014-09-08 → 2014-09-09 (+1d) | 3d → 3.45d | 0% → 77% |  |  |  |
| 118 | **Softwaretests** | 2014-09-03 A | 2014-09-05 → 2014-09-04 A (-1d) | 2d → 0.85d | 0% → 100% | 0d → none |  |  |
| 125 | **Usability-Test** | 2014-09-05 → 2014-09-04 A (-1d) | 2014-09-08 → 2014-09-09 (+1d) | 1d → 3.1d | 0% → 68% |  | 118 → 124 |  |
| 129 | Projektabschluss | 2014-09-08 → 2014-09-09 (+1d) | 2014-09-08 → 2014-09-09 (+1d) |  |  |  |  |  |

## Version 20 (data date 2014-08-12, saved 2014-08-30, file Projektplan_11.mpp)

Note of the change: Merge branch 'streaming' of github.com:UniRegensburg/ps-mediathekcrawler into streaming

Last finish 2014-09-09 → 2014-09-11 (+2d). Complete tasks 100 → 101.

Added:

| ID | Task | Duration | Start | Finish | Predecessors | Resources |
| --- | --- | --- | --- | --- | --- | --- |
| 129 | Dokumentation | 1.38d | 2014-09-09 | 2014-09-11 | 128 | Lukas; David; Felix; Tobias |

Changed:

| ID | Task | Start | Finish | Complete | Total float | Predecessors |
| --- | --- | --- | --- | --- | --- | --- |
| 80 | **Interface** |  |  | 97% → 99% | 0d → 5.5d |  |
| 94 | Logo-Entwurf | 2014-08-12 A |  | 0% → 75% | 7.62d → 14.25d |  |
| 117 | **Testing** |  | 2014-09-09 A | 77% → 100% | 0d → none |  |
| 125 | **Usability-Test** |  | 2014-09-09 A | 68% → 100% | 0d → none |  |
| 128 | Korrekturen |  | 2014-09-09 A | 50% → 100% | 0d → none |  |
| 130 | Projektabschluss | 2014-09-09 → 2014-09-11 (+2d) | 2014-09-09 → 2014-09-11 (+2d) |  |  | 117 → 129 |

## Version 21 (data date 2014-08-30, saved 2014-08-30, file Projektplan.mpp)

Note of the change: updates für abgabe

Last finish 2014-09-11 → 2014-09-09 (-2d). Complete tasks 101 → 103.

Removed: 129 Dokumentation

Changed:

| ID | Task | Start | Finish | Complete | Total float | Predecessors |
| --- | --- | --- | --- | --- | --- | --- |
| 80 | **Interface** |  | 2014-09-03 A | 99% → 100% | 5.5d → none |  |
| 94 | Logo-Entwurf |  | 2014-08-13 A | 75% → 100% | 14.25d → none |  |
| 129 | Projektabschluss | 2014-09-11 → 2014-09-09 A (-2d) | 2014-09-11 → 2014-09-09 A (-2d) | 0% → 100% | 0d → none | Dokumentation → 117 |

## Version 22 (data date 2014-08-12, saved 2015-01-07, file Projektplan_12.mpp)

Note of the change: Final project plan

Last finish 2014-09-09 → 2014-09-11 (+2d). Complete tasks 103 → 104.

Added:

| ID | Task | Duration | Start | Finish | Predecessors | Resources |
| --- | --- | --- | --- | --- | --- | --- |
| 129 | Dokumentation | 1.38d | 2014-09-09 A | 2014-09-11 A | 128 | Lukas; David; Felix; Tobias |

Changed:

| ID | Task | Start | Finish | Predecessors |
| --- | --- | --- | --- | --- |
| 130 | Projektabschluss | 2014-09-09 A → 2014-09-11 A (+2d) | 2014-09-09 A → 2014-09-11 A (+2d) | 117 → 129 |
